# Hajt Website

Schedule from ProjectLibre, 2017-08-01 to 2017-09-06.

## Calendars

- Standard: Mon-Fri 08:00-12:00, 13:00-17:00; Sat-Sun off.

## Resources

| Resource |
| --- |
| Unassigned |
| Ratheesh |
| Lekshmi |
| Sumesh |
| Sharath |
| Kiran |
| Client |

## Schedule

| ID | WBS | Task | Duration | Start | Finish | Predecessors | Total slack | Resources |
| --- | --- | --- | --- | --- | --- | --- | --- | --- |
| 1 | 1 | **Application** | 26.88d | 2017-08-01 08:00 | 2017-09-06 16:02 |  |  |  |
| 2 | 1.1 | **Low Level Design (Milestone 1)** | 26.88d | 2017-08-01 08:00 | 2017-09-06 16:02 |  |  |  |
| 3 | 1.1.1 | Exploration and Discovery | 1d | 2017-08-01 08:00 | 2017-08-01 17:00 |  |  | Ratheesh |
| 4 | 1.1.2 | **Analysis and Planning** | 4d | 2017-08-02 08:00 | 2017-08-07 17:00 |  |  |  |
| 5 | 1.1.2.1 | SRS Creation | 1d | 2017-08-02 08:00 | 2017-08-02 17:00 | 3 |  | Ratheesh |
| 6 | 1.1.2.2 | SRS Confirmation | 0d | 2017-08-02 17:00 | 2017-08-02 17:00 | 5 |  | Client |
| 7 | 1.1.2.3 | Design & Prototyping | 2d | 2017-08-03 08:00 | 2017-08-04 17:00 | 6 |  | Sharath |
| 8 | 1.1.2.4 | Design & Prototyping Confirmation | 0d | 2017-08-04 17:00 | 2017-08-04 17:00 | 7 |  | Client |
| 9 | 1.1.2.5 | FS Creation | 1d | 2017-08-07 08:00 | 2017-08-07 17:00 | 8 |  | Ratheesh |
| 10 | 1.1.2.6 | FS Confirmation | 0d | 2017-08-07 17:00 | 2017-08-07 17:00 | 9 |  | Client |
| 11 | 1.1.2.7 | Technical Architecture | 0d | 2017-08-07 17:00 | 2017-08-07 17:00 | 10 |  | Ratheesh |
| 12 | 1.1.2.8 | Database Architecture | 0d | 2017-08-07 17:00 | 2017-08-07 17:00 | 11 |  | Ratheesh |
| 13 | 1.1.3 | **Development & Testing (Milestone 2)** | 21.88d | 2017-08-08 08:00 | 2017-09-06 16:02 |  |  |  |
| 14 | 1.1.3.1 | **Admin** | 6.25d | 2017-08-08 08:00 | 2017-08-16 10:00 |  |  |  |
| 15 | 1.1.3.1.1 | User Management ( add users, reset passwords etc.) and Roles (copy editors, publishers) | 0.5d | 2017-08-08 08:00 | 2017-08-08 13:00 | 12 |  | Lekshmi |
| 16 | 1.1.3.1.2 | Authentication & Authorization | 0.5d | 2017-08-08 13:00 | 2017-08-08 17:00 | 15 |  | Lekshmi |
| 17 | 1.1.3.1.3 | Configure multilanguage (content localization) | 1d | 2017-08-09 08:00 | 2017-08-09 17:00 | 16 |  | Lekshmi |
| 18 | 1.1.3.1.4 | Auditing and logging | 1d | 2017-08-10 08:00 | 2017-08-10 17:00 | 17 |  | Lekshmi |
| 19 | 1.1.3.1.5 | Update container tracking | 1d | 2017-08-11 08:00 | 2017-08-11 17:00 | 18 |  | Lekshmi |
| 20 | 1.1.3.1.6 | Generate reports for Admin user in CSV format | 0.75d | 2017-08-14 08:00 | 2017-08-14 15:00 | 19 |  | Lekshmi |
| 21 | 1.1.3.1.7 | Approve Birthing (place holder for intended user) | 0.75d | 2017-08-14 15:00 | 2017-08-15 13:00 | 20 |  | Lekshmi |
| 22 | 1.1.3.1.8 | Approve Gatepass (place holder for intended user) | 0.75d | 2017-08-15 13:00 | 2017-08-16 10:00 | 21 |  | Lekshmi |
| 23 | 1.1.3.2 | **CMS Features** | 2.75d | 2017-08-08 08:00 | 2017-08-10 15:00 |  | 319d |  |
| 24 | 1.1.3.2.1 | Create or modify existing workflows via UI | 1d | 2017-08-08 08:00 | 2017-08-08 17:00 | 12 | 319d | Sumesh |
| 25 | 1.1.3.2.2 | Assign workflow permissions to different roles | 0.75d | 2017-08-09 08:00 | 2017-08-09 15:00 | 24 | 319d | Sumesh |
| 26 | 1.1.3.2.3 | Automatic backup and restore of application | 0.5d | 2017-08-09 15:00 | 2017-08-10 10:00 | 25 | 319d | Sumesh |
| 27 | 1.1.3.2.4 | Automatic backup and restore of database | 0.5d | 2017-08-10 10:00 | 2017-08-10 15:00 | 26 | 319d | Sumesh |

| ID | WBS | Task | Duration | Start | Finish | Predecessors | Total slack | Resources |
| --- | --- | --- | --- | --- | --- | --- | --- | --- |
| 28 | 1.1.3.3 | **Hajt Work Culture** | 1.63d | 2017-08-10 15:00 | 2017-08-14 11:02 |  | 319d |  |
| 29 | 1.1.3.3.1 | Job application form with resume attachment and success or failure message in processing the request | 0.5d | 2017-08-10 15:00 | 2017-08-11 10:00 | 27 | 319d | Sumesh |
| 30 | 1.1.3.3.2 | Autogenerated emails to notify users of a successfull job submission | 0.75d | 2017-08-11 10:00 | 2017-08-11 17:00 | 29 | 319d | Sumesh |
| 31 | 1.1.3.3.3 | Information on Hajt Work Culture | 0.38d | 2017-08-14 08:00 | 2017-08-14 11:02 | 30 | 319d | Sumesh |
| 32 | 1.1.3.4 | **Downloadable forms** | 5.15d | 2017-08-14 11:02 | 2017-08-21 13:14 |  | 319d |  |
| 33 | 1.1.3.4.1 | Forms should be downloadable with information on supporting documents to fullfill the request | 1d | 2017-08-14 11:02 | 2017-08-15 11:02 | 31 | 319d | Sumesh |
| 34 | 1.1.3.4.2 | Request letter for hot work permit | 0.38d | 2017-08-15 11:02 | 2017-08-15 15:04 | 33 | 319d | Sumesh |
| 35 | 1.1.3.4.3 | Request letter for repairs work (Cold work). | 0.38d | 2017-08-15 15:04 | 2017-08-16 09:07 | 34 | 319d | Sumesh |
| 36 | 1.1.3.4.4 | Maintain trainee records on performance | 0.38d | 2017-08-16 09:07 | 2017-08-16 13:09 | 35 | 319d | Sumesh |
| 37 | 1.1.3.4.5 | Request letter for Diving permission. | 0.38d | 2017-08-16 13:09 | 2017-08-16 16:12 | 36 | 319d | Sumesh |
| 38 | 1.1.3.4.6 | Request letter for Sanitation certificate. | 0.38d | 2017-08-16 16:12 | 2017-08-17 10:14 | 37 | 319d | Sumesh |
| 39 | 1.1.3.4.7 | Users will receive e-invoices via e-mail | 0.75d | 2017-08-17 10:14 | 2017-08-18 08:14 | 38 | 319d | Sumesh |
| 40 | 1.1.3.4.8 | Users should be able to download e-invoices in PDF format | 0.5d | 2017-08-18 08:14 | 2017-08-18 13:14 | 39 | 319d | Sumesh |
| 41 | 1.1.3.4.9 | Users shall have a download token to authenticate the user before they can download the invoice | 0.5d | 2017-08-18 13:14 | 2017-08-21 08:14 | 40 | 319d | Sumesh |
| 42 | 1.1.3.4.10 | Download or request complete pricing list i.e. Tariff, Customs duties, other charges and service standards. | 0.5d | 2017-08-21 08:14 | 2017-08-21 13:14 | 41 | 319d | Sumesh |
| 43 | 1.1.3.5 | **Birthing Request Work Flow** | 3.75d | 2017-08-16 10:00 | 2017-08-21 17:00 |  |  |  |
| 44 | 1.1.3.5.1 | Request birthing with option to save and edit form before form submission | 1d | 2017-08-16 10:00 | 2017-08-17 10:00 | 22 |  | Lekshmi |
| 45 | 1.1.3.5.2 | Submit Birthing request with required documents (may be mandatory or optional) | 0.5d | 2017-08-17 10:00 | 2017-08-17 15:00 | 44 |  | Lekshmi |
| 46 | 1.1.3.5.3 | Notify users upon successfull submission | 0.5d | 2017-08-17 15:00 | 2017-08-18 10:00 | 45 |  | Lekshmi |
| 47 | 1.1.3.5.4 | Approval hierarchy to accept or reject the request | 0.75d | 2017-08-18 10:00 | 2017-08-18 17:00 | 46 |  | Lekshmi |
| 48 | 1.1.3.5.5 | Notiy users upon approval or rejection immediately or via emails with steps to be taken to gain approval | 0.5d | 2017-08-21 08:00 | 2017-08-21 13:00 | 47 |  | Lekshmi |
| 49 | 1.1.3.5.6 | Downloadable approved birthing requests | 0.5d | 2017-08-21 13:00 | 2017-08-21 17:00 | 48 |  | Lekshmi |
| 50 | 1.1.3.6 | **Gatepass request worklow** | 3.5d | 2017-08-21 13:14 | 2017-08-25 08:14 |  | 319d |  |
| 51 | 1.1.3.6.1 | Fill gate passrequest form with option to save and resume | 0.75d | 2017-08-21 13:14 | 2017-08-22 10:14 | 42 | 319d | Sumesh |
| 52 | 1.1.3.6.2 | Submit gatepass request form with required documents | 0.5d | 2017-08-22 10:14 | 2017-08-22 15:14 | 51 | 319d | Sumesh |
| 53 | 1.1.3.6.3 | Notify users upon successfull submission | 0.5d | 2017-08-22 15:14 | 2017-08-23 10:14 | 52 | 319d | Sumesh |
| 54 | 1.1.3.6.4 | Approval hierarchy to accept or reject the request | 0.75d | 2017-08-23 10:14 | 2017-08-24 08:14 | 53 | 319d | Sumesh |
| 55 | 1.1.3.6.5 | Notiy users upon approval or rejection immediately or via emails with steps to be taken to gain approval | 0.5d | 2017-08-24 08:14 | 2017-08-24 13:14 | 54 | 319d | Sumesh |
| 56 | 1.1.3.6.6 | Downloadable approved gatepass requests | 0.5d | 2017-08-24 13:14 | 2017-08-25 08:14 | 55 | 319d | Sumesh |

| ID | WBS | Task | Duration | Start | Finish | Predecessors | Total slack | Resources |
| --- | --- | --- | --- | --- | --- | --- | --- | --- |
| 57 | 1.1.3.7 | **Site pages** | 5.66d | 2017-08-25 08:14 | 2017-09-01 14:31 |  | 319d |  |
| 58 | 1.1.3.7.1 | Contact Us, Business services and procedures | 0.38d | 2017-08-25 08:14 | 2017-08-25 11:16 | 56 | 319d | Sumesh |
| 59 | 1.1.3.7.2 | Updatable Press release page | 0.38d | 2017-08-25 11:16 | 2017-08-25 15:19 | 58 | 319d | Sumesh |
| 60 | 1.1.3.7.3 | Updatable service pages | 0.38d | 2017-08-25 15:19 | 2017-08-28 09:21 | 59 | 319d | Sumesh |
| 61 | 1.1.3.7.4 | Updatable Anouncement pages | 0.38d | 2017-08-28 09:21 | 2017-08-28 13:24 | 60 | 319d | Sumesh |
| 62 | 1.1.3.7.5 | Updatable Affiliate organizations page, links to HAJT group of companies, external ministries and internal services such as HAJT e-customs and e-services | 0.38d | 2017-08-28 13:24 | 2017-08-28 16:26 | 61 | 319d | Sumesh |
| 63 | 1.1.3.7.6 | Updatable News page | 0.38d | 2017-08-28 16:26 | 2017-08-29 10:28 | 62 | 319d | Sumesh |
| 64 | 1.1.3.7.7 | Updatable page with audio and video streaming services | 0.38d | 2017-08-29 10:28 | 2017-08-29 14:31 | 63 | 319d | Sumesh |
| 65 | 1.1.3.7.8 | Searchable site with basic and advanced search. Full text search in Arabic, English & French. Context sensitive and key word sensitive search on any site content** | 1d | 2017-08-29 14:31 | 2017-08-30 14:31 | 64 | 319d | Sumesh |
| 66 | 1.1.3.7.9 | Simple and advanced search for container tracking. (read only) with search hints and informational messages | 2d | 2017-08-30 14:31 | 2017-09-01 14:31 | 65 | 319d | Sumesh |
| 67 | 1.1.3.8 | **System Features** | 1.38d | 2017-08-22 08:00 | 2017-08-23 11:02 |  |  |  |
| 68 | 1.1.3.8.1 | Redirection mechanism and maintain states between pages | 0.5d | 2017-08-22 08:00 | 2017-08-22 13:00 | 49 |  | Lekshmi |
| 69 | 1.1.3.8.2 | Resoponsive UI that supports multiple resolutions and latest browsers | 0.38d | 2017-08-22 13:00 | 2017-08-22 16:02 | 68 |  | Lekshmi |
| 70 | 1.1.3.8.3 | Secure & encrypted site | 0d | 2017-08-22 16:02 | 2017-08-22 16:02 | 69 |  | Lekshmi |
| 71 | 1.1.3.8.4 | Multilingual site in Arabic, English and French with implicit localization | 0.5d | 2017-08-22 16:02 | 2017-08-23 11:02 | 70 |  | Lekshmi |
| 72 | 1.1.3.9 | **Testing and Fixes** | 10.5d | 2017-08-23 11:02 | 2017-09-06 16:02 |  |  |  |
| 73 | 1.1.3.9.1 | Internal Testing (Cycle 1) & Fixing | 9d | 2017-08-23 11:02 | 2017-09-05 11:02 | 71 |  | Kiran |
| 74 | 1.1.3.9.2 | UAT Support & Implementation | 1d | 2017-09-05 11:02 | 2017-09-06 11:02 | 73 |  | Ratheesh |
| 75 | 1.1.3.9.3 | Deployment | 0.5d | 2017-09-06 11:02 | 2017-09-06 16:02 | 74 |  | Ratheesh |
