# Software Development

Schedule from MS Project, 2018-10-15 to 2019-02-06.

## Calendars

- Standard: Mon-Fri 08:00-12:00, 13:00-17:00; Sat-Sun off. Exceptions (off unless hours are given): 2018-10-20 08:00-12:00, 13:00-17:00, 2018-11-03 08:00-12:00, 13:00-17:00, 2018-11-17 08:00-12:00, 13:00-17:00, 2018-12-22 08:00-12:00, 13:00-17:00.

## Resources

| Resource |
| --- |
| Management |
| Project Manager |
| Analyst 1 |
| Developer 1 |
| Testers |
| Trainers |
| Technical Communicators |
| Deployment Team |
| PWC |
| UI/UX 1 |
| Developer 2 |
| Development Team |
| Developer 3 |
| Analyst 2 |
| UI/UX 2 |
| UI |
| Android / IOS Dev 1 |
| Android / iOS Dev 2 |
| Android Dev |
| IOS Dev |
| QA 1 |
| Lead QA |
| QA 2 |
| QA 3 |
| QA 4 |
| Developer 4 |

## Schedule

| ID | WBS | Task | Type | Duration | Start | Finish | Predecessors | Total slack | Free slack | Constraint | Resources | Work |
| --- | --- | --- | --- | --- | --- | --- | --- | --- | --- | --- | --- | --- |
| 1 | 1 | **Scope** |  | 1.5d | 2018-10-15 | 2018-10-16 |  | 30d |  |  |  | 12h |
| 2 | 1.1 | Determine project scope |  | 4h | 2018-10-15 | 2018-10-15 |  | 30d | 0d | start no earlier than 2018-10-15 | Management | 4h |
| 3 | 1.2 | Secure core resources |  | 1d | 2018-10-15 | 2018-10-16 | 2 | 30d | 0d |  | Project Manager | 8h |
| 4 | 1.3 | Scope complete | milestone | 0d | 2018-10-16 | 2018-10-16 | 3 | 30d | 1.5d |  |  |  |
| 5 | 2 | **Analysis/Software Requirements** |  | 9d | 2018-10-18 | 2018-10-29 |  | 28.5d |  |  |  | 136h |
| 6 | 2.1 | Draft SRS |  | 3d | 2018-10-18 | 2018-10-20 | 4 | 28.5d | 0d | finish no earlier than 2018-10-20 | Analyst 1 | 24h |
| 7 | 2.2 | Review SRS (PWC + Verbat Meet up) |  | 3d | 2018-10-22 | 2018-10-24 | 6 | 28.5d | 0d | start no earlier than 2018-10-22 | PWC; Management; Project Manager | 72h |
| 8 | 2.3 | Incorporate feedback on SRS |  | 2d | 2018-10-25 | 2018-10-26 | 7 | 28.5d | 0d | finish no earlier than 2018-10-24 | Analyst 1 | 16h |
| 9 | 2.4 | Update delivery Schedule |  | 1d | 2018-10-29 | 2018-10-29 | 8 | 75d |  |  | Project Manager | 8h |
| 10 | 2.5 | Obtain approvals to proceed |  | 8h | 2018-10-29 | 2018-10-29 | 8 | 28.5d | 0d | start no earlier than 2018-10-26 | Management; PWC | 16h |
| 11 | 2.6 | Analysis complete | milestone | 0d | 2018-10-29 | 2018-10-29 | 10 | 28.5d | 0d |  |  |  |
| 12 | 3 | **Design** |  | 7d | 2018-10-30 | 2018-11-06 |  | 28.5d |  |  |  | 88h |
| 13 | 3.1 | Develop prototype |  | 5d | 2018-10-30 | 2018-11-03 | 11 | 68d | 0d | start no earlier than 2018-10-26 | UI/UX 1 | 40h |
| 14 | 3.2 | Final approve of SRS and Review prototype |  | 1d | 2018-10-30 | 2018-10-30 | 11 | 28.5d | 0d | start no earlier than 2018-10-26 | PWC | 8h |
| 15 | 3.3 | Incorporate feedback on prototype |  | 2d | 2018-11-05 | 2018-11-06 | 13 | 68d |  | start no earlier than 2018-10-30 | UI/UX 1 | 16h |
| 16 | 3.4 | Database Design |  | 2d | 2018-10-31 | 2018-11-01 | 14 | 28.5d | 0d | start no earlier than 2018-10-29 | Development Team | 16h |
| 17 | 3.5 | Obtain approval to proceed |  | 4h | 2018-11-02 | 2018-11-02 | 16 | 28.5d | 0d |  | Management; Project Manager | 8h |
| 18 | 3.6 | Design complete | milestone | 0d | 2018-11-02 | 2018-11-02 | 17 | 28.5d | 0d |  | Project Manager |  |
| 19 | 4 | **Development** |  | 71.01d | 2018-10-15 | 2019-01-16 |  | 6d |  |  |  | 2360.16h |
| 20 | 4.1 | **Web Admin** |  | 43.5d | 2018-11-02 | 2018-12-28 | 18 | 28d |  |  |  | 672h |
| 21 | 4.1.1 | Confirm Database Design |  | 8h | 2018-11-02 | 2018-11-03 |  | 28.5d | 0d |  | Development Team | 8h |
| 22 | 4.1.2 | Master Data Management |  | 3d | 2018-11-03 | 2018-11-07 | 21 | 28.5d | 0d | finish no earlier than 2018-11-03 | Developer 2 | 24h |
| 23 | 4.1.3 | User management with roles & entitlements |  | 2d | 2018-11-03 | 2018-11-06 | 21 | 47.5d | 0d | finish no earlier than 2018-11-03 | Developer 1 | 16h |
| 24 | 4.1.4 | Manage Corp Clients |  | 1d | 2018-11-06 | 2018-11-07 | 23 | 47.5d | 0d | start no earlier than 2018-11-06 | Developer 1 | 8h |
| 25 | 4.1.5 | Price Management : Price configuration |  | 2d | 2018-11-07 | 2018-11-09 | 22 | 28.5d | 0d |  | Developer 2 | 16h |
| 26 | 4.1.6 | Plan Management |  | 3d | 2018-11-07 | 2018-11-12 | 24 | 47.5d | 0d | start no earlier than 2018-11-07 | Developer 1 | 24h |
| 27 | 4.1.7 | IP Management for corporate clients |  | 2d | 2018-11-09 | 2018-11-13 | 25 | 28.5d | 0d |  | Developer 2 | 16h |
| 28 | 4.1.8 | Help Center |  | 2d | 2018-11-12 | 2018-11-14 | 26 | 47.5d | 0d |  | Developer 1 | 16h |
| 29 | 4.1.9 | Notification Management |  | 3d | 2018-11-13 | 2018-11-16 | 27 | 28.5d | 0d |  | Developer 2 | 24h |
| 30 | 4.1.10 | Video Management |  | 2d | 2018-11-14 | 2018-11-16 | 28 | 47.5d | 0d |  | Developer 1 | 16h |
| 31 | 4.1.11 | Plan Upgrade (change selected plan) |  | 4d | 2018-11-16 | 2018-11-21 | 29 | 28.5d | 0d |  | Developer 2 | 32h |
| 32 | 4.1.12 | Data gathering based on plan selection (Upgrade Wizard) |  | 4d | 2018-11-16 | 2018-11-21 | 30 | 47.5d | 0d | start no earlier than 2018-11-16 | Developer 1 | 32h |
| 33 | 4.1.13 | Resubmit returns |  | 3d | 2018-11-21 | 2018-11-26 | 31 | 28.5d | 0d |  | Developer 2 | 24h |
| 34 | 4.1.14 | Revise returns |  | 3d | 2018-11-21 | 2018-11-26 | 32 | 47.5d | 0d |  | Developer 1 | 24h |
| 35 | 4.1.15 | Billing, Invoicing, End userTx summary |  | 3d | 2018-11-26 | 2018-11-29 | 34 | 47.5d | 0.5d |  | Developer 1 | 24h |
| 36 | 4.1.16 | End user Listing: Year wise user management screen |  | 2d | 2018-11-26 | 2018-11-28 | 33 | 28.5d | 0d |  | Developer 2 | 16h |
| 37 | 4.1.17 | Unlock User |  | 1d | 2018-11-28 | 2018-11-29 | 36 | 28.5d | 0.5d |  | Developer 2 | 8h |
| 38 | 4.1.18 | Dashboard Updates |  | 3d | 2018-11-30 | 2018-12-04 | 35 | 47d |  | start no earlier than 2018-11-30 | Developer 1 | 24h |
| 39 | 4.1.19 | Logging, Auditing, event logs, Security, Brush up |  | 3d | 2018-11-30 | 2018-12-04 | 37 | 28d | 0d | start no earlier than 2018-11-30 | Developer 2 | 24h |
| 40 | 4.1.20 | API Integration, Japanese, Misc |  | 12d | 2018-12-05 | 2018-12-20 | 37 | 29d | 0d | start no earlier than 2018-12-05 | Developer 1 | 96h |
| 41 | 4.1.21 | Implementaion of domain name instead of IP |  | 2d | 2018-12-05 | 2018-12-06 | 39 | 28d | 0d | start no earlier than 2018-12-05 | Developer 2 | 16h |
| 42 | 4.1.22 | Implementaion of Help |  | 3d | 2018-12-07 | 2018-12-11 | 41 | 28d | 0d |  | Developer 2 | 24h |
| 43 | 4.1.23 | Enabling and disabling feature for the master data in the admin |  | 1d | 2018-12-12 | 2018-12-12 | 42 | 28d | 0d |  | Developer 2 | 8h |
| 44 | 4.1.24 | All the Deduction tabs to be consolidated to a single page/form |  | 1d | 2018-12-13 | 2018-12-13 | 43 | 28d | 0d |  | Developer 2 | 8h |
| 45 | 4.1.25 | New main tab for foreign assests with new features |  | 5d | 2018-12-14 | 2018-12-20 | 44 | 28d | 0d |  | Developer 2 | 40h |
| 46 | 4.1.26 | Dashboard - Tax summary 2 tabs to show revised |  | 1d | 2018-12-21 | 2018-12-21 | 40 | 29d | 0d |  | Developer 1 | 8h |
| 47 | 4.1.27 | Revise return |  | 1d | 2018-12-21 | 2018-12-21 | 45 | 28d | 0d |  | Developer 2 | 8h |
| 48 | 4.1.28 | Review to show sub section status |  | 1d | 2018-12-22 | 2018-12-22 | 46 | 29d | 0d |  | Developer 1 | 8h |
| 49 | 4.1.29 | Plan change auditing |  | 2d | 2018-12-22 | 2018-12-24 | 47 | 28d | 0d |  | Developer 2 | 16h |
| 50 | 4.1.30 | Currency field along with amount field |  | 4d | 2018-12-24 | 2018-12-27 | 48 | 29d |  |  | Developer 1 | 32h |
| 51 | 4.1.31 | The system should alert the user during Multiple Login. Upon clicking “Confirm”, the system should log out the user from the previous session. |  | 1d | 2018-12-25 | 2018-12-25 | 49 | 28d | 0d |  | Developer 2 | 8h |
| 52 | 4.1.32 | Minor changes(Estimated) |  | 3d | 2018-12-26 | 2018-12-28 | 51 | 28d | 0d |  | Developer 2 | 24h |
| 53 | 4.1.33 | Development complete | milestone | 0d | 2018-12-28 | 2018-12-28 | 52 | 28d |  |  |  |  |

| ID | WBS | Task | Type | Duration | Start | Finish | Predecessors | Total slack | Free slack | Constraint | Resources | Work |
| --- | --- | --- | --- | --- | --- | --- | --- | --- | --- | --- | --- | --- |
| 54 | 4.2 | **Web API** |  | 25d | 2018-10-22 | 2018-11-21 |  | 0d |  |  |  | 200h |
| 55 | 4.2.1 | Login Management |  | 2d | 2018-10-22 | 2018-10-23 |  | 0d |  | start no earlier than 2018-10-22 | Developer 3 | 16h |
| 56 | 4.2.2 | Assessment year |  | 1d | 2018-10-24 | 2018-10-24 | 55 | 0d |  |  | Developer 3 | 8h |
| 57 | 4.2.3 | Plan selection |  | 2d | 2018-10-25 | 2018-10-26 | 56 | 0d |  |  | Developer 3 | 16h |
| 58 | 4.2.4 | XML Uploads |  | 2d | 2018-10-29 | 2018-10-30 | 57 | 0d |  |  | Developer 3 | 16h |
| 59 | 4.2.5 | Tax filing |  | 15d | 2018-10-31 | 2018-11-17 | 58 | 0d |  |  | Developer 3 | 120h |
| 60 | 4.2.6 | Dashboard Updates |  | 3d | 2018-11-19 | 2018-11-21 | 59 | 0d |  |  | Developer 3 | 24h |
| 61 | 4.2.7 | Development complete | milestone | 0d | 2018-11-21 | 2018-11-21 | 60 | 0d |  |  |  |  |
| 62 | 4.3 | **Japanese Langauge integration** |  | 35d | 2018-11-21 | 2019-01-08 |  | 0d |  |  |  | 280h |
| 63 | 4.3.1 | Create Resource File | milestone | 0d | 2018-11-21 | 2018-11-21 | 61 | 0d |  |  |  |  |
| 64 | 4.3.2 | Create Multi language Routes and Route handling mechanism (includes SEO) | milestone | 0d | 2018-11-21 | 2018-11-21 | 63 | 0d |  |  |  |  |
| 65 | 4.3.3 | Activate Culture & Upgrade content, labels and form values | milestone | 0d | 2018-11-21 | 2018-11-21 | 64 | 0d |  |  |  |  |
| 66 | 4.3.4 | Total # of pages to modify 78 |  | 35d | 2018-11-22 | 2019-01-08 | 65 | 0d |  | start no earlier than 2018-11-21 | Developer 3 | 280h |
| 67 | 4.3.5 | Development complete | milestone | 0d | 2019-01-08 | 2019-01-08 | 66 | 21d |  |  |  |  |
| 68 | 4.4 | **Mobile App** |  | 71.01d | 2018-10-15 | 2019-01-16 |  | 7.99d |  |  |  | 1208.16h |
| 69 | 4.4.1 | SRS |  | 6d | 2018-10-15 | 2018-10-20 |  | 7.99d | 0d | finish no earlier than 2018-10-20 | Analyst 2 | 48h |
| 70 | 4.4.2 | Confirm SRS (PWC + Verbat Meet up) |  | 4d | 2018-10-22 | 2018-10-25 | 69 | 7.99d | 0d | finish no earlier than 2018-10-25 | Management; PWC | 64h |
| 71 | 4.4.3 | Wire Frames |  | 2d | 2018-10-26 | 2018-10-29 | 70 | 7.99d | 0d | finish no earlier than 2018-10-29 | UI | 16h |
| 72 | 4.4.4 | PWC review of wireframes |  | 5d | 2018-10-30 | 2018-11-03 | 71 | 58d | 2d | finish no earlier than 2018-11-03 | PWC | 40h |
| 73 | 4.4.5 | Prototype and Designing |  | 12d | 2018-11-07 | 2018-11-21 | 72 | 56d |  | start no earlier than 2018-11-07 | UI/UX 1 | 96h |
| 74 | 4.4.6 | Splash Screen, Login etc. |  | 2d | 2018-10-30 | 2018-10-31 | 71 | 7.99d | 0d |  | Android Dev; IOS Dev | 32h |
| 75 | 4.4.7 | Dashboard(Tax Summary, Chellan, Filter, Uploaded docs, ITR related docs, Approve, Notifications, Yearly Summary) |  | 2d | 2018-11-01 | 2018-11-02 | 74 | 7.99d | 0d |  | Android Dev; IOS Dev | 32h |
| 76 | 4.4.8 | Home page |  | 0.75d | 2018-11-03 | 2018-11-03 | 75 | 7.99d | 0d |  | IOS Dev; Android Dev | 12h |
| 77 | 4.4.9 | Registration |  | 1d | 2018-11-03 | 2018-11-05 | 76 | 7.99d | 0d |  | Android Dev; IOS Dev | 16h |
| 78 | 4.4.10 | OTP verification page |  | 0.38d | 2018-11-05 | 2018-11-06 | 77 | 7.99d | 0d |  | Android Dev; IOS Dev | 6.08h |
| 79 | 4.4.11 | Video |  | 1d | 2018-11-06 | 2018-11-07 | 78 | 7.99d | 0d |  | Android Dev; IOS Dev | 16h |
| 80 | 4.4.12 | Pricing and comparision page |  | 2d | 2018-11-07 | 2018-11-09 | 79 | 7.99d | 0d |  | Android Dev; IOS Dev | 32h |
| 81 | 4.4.13 | Platinum Plan Notification |  | 0.38d | 2018-11-09 | 2018-11-09 | 80 | 7.99d | 0d |  | Android Dev; IOS Dev | 6.08h |
| 82 | 4.4.14 | XML upload from different storage space |  | 1d | 2018-11-09 | 2018-11-12 | 81 | 7.99d | 0d |  | Android Dev; IOS Dev | 16h |
| 83 | 4.4.15 | Implementaion of Help (video, image) |  | 1.5d | 2018-11-12 | 2018-11-14 | 82 | 7.99d | 0d |  | Android Dev; IOS Dev | 24h |
| 84 | 4.4.16 | Plan change auditing |  | 2d | 2018-11-14 | 2018-11-16 | 83 | 7.99d | 0d |  | Android Dev; IOS Dev | 32h |
| 85 | 4.4.17 | Revise return |  | 1d | 2018-11-16 | 2018-11-17 | 84 | 7.99d | 0d |  | Android Dev; IOS Dev | 16h |
| 86 | 4.4.18 | Tax summary 2 tabs to show revised |  | 1d | 2018-11-17 | 2018-11-19 | 85 | 7.99d | 0d |  | Android Dev; IOS Dev | 16h |
| 87 | 4.4.19 | Currency field along with amount field (Design Change) |  | 2d | 2018-11-19 | 2018-11-21 | 86 | 7.99d | 0d |  | Android Dev; IOS Dev | 32h |
| 88 | 4.4.20 | XML prefill controls to be grouped (only Design Change) |  | 1d | 2018-11-21 | 2018-11-22 | 87 | 7.99d | 0d |  | Android Dev; IOS Dev | 16h |
| 89 | 4.4.21 | Foreign Assets |  | 5d | 2018-11-22 | 2018-11-29 | 88 | 7.99d | 0d |  | Android Dev; IOS Dev | 80h |
| 90 | 4.4.22 | Start Tax Return (Year / Package selection, Prefill XML / PAN) |  | 2d | 2018-11-29 | 2018-12-03 | 89 | 7.99d | 0d |  | Android Dev; IOS Dev | 32h |
| 91 | 4.4.23 | Personal details |  | 2d | 2018-12-03 | 2018-12-05 | 90 | 7.99d | 0d |  | Android Dev; IOS Dev | 32h |
| 92 | 4.4.24 | Bank Details |  | 2d | 2018-12-05 | 2018-12-07 | 91 | 7.99d | 0d |  | Android Dev; IOS Dev | 32h |
| 93 | 4.4.25 | Assets & Liabelities |  | 3d | 2018-12-07 | 2018-12-12 | 92 | 7.99d | 0d |  | Android Dev; IOS Dev | 48h |
| 94 | 4.4.26 | Salary |  | 2d | 2018-12-12 | 2018-12-14 | 93 | 7.99d | 0d |  | Android Dev; IOS Dev | 32h |
| 95 | 4.4.27 | Other Income |  | 3d | 2018-12-14 | 2018-12-19 | 94 | 7.99d | 0d |  | Android Dev; IOS Dev | 48h |
| 96 | 4.4.28 | House property |  | 3d | 2018-12-19 | 2018-12-22 | 95 | 7.99d | 0d |  | Android Dev; IOS Dev | 48h |
| 97 | 4.4.29 | Section 80 |  | 3d | 2018-12-22 | 2018-12-26 | 96 | 7.99d | 0d |  | Android Dev; IOS Dev | 48h |
| 98 | 4.4.30 | More Deductions (80E, 80CCC etc.) |  | 3d | 2018-12-26 | 2018-12-31 | 97 | 7.99d | 0d |  | Android Dev; IOS Dev | 48h |
| 99 | 4.4.31 | Taxes paid (Upload 26AS, Challan Details, Summary & review, PDF report, Payment) |  | 3d | 2018-12-31 | 2019-01-03 | 98 | 7.99d | 0d |  | Android Dev; IOS Dev | 48h |
| 100 | 4.4.32 | Help center (Chat bot, Whats new) |  | 3d | 2019-01-03 | 2019-01-08 | 99 | 7.99d | 0d |  | Android Dev; IOS Dev | 48h |
| 101 | 4.4.33 | Static Pages (FAQ, T&C, Privacy, legal, support, Contact) |  | 3d | 2019-01-08 | 2019-01-11 | 100 | 7.99d | 0d |  | Android Dev; IOS Dev | 48h |
| 102 | 4.4.34 | API integration |  | 3d | 2019-01-11 | 2019-01-16 | 101 | 7.99d | 0d |  | Android Dev; IOS Dev | 48h |

| ID | WBS | Task | Type | Duration | Start | Finish | Predecessors | Total slack | Free slack | Constraint | Resources | Work |
| --- | --- | --- | --- | --- | --- | --- | --- | --- | --- | --- | --- | --- |
| 103 | 5 | **Testing** |  | 72d | 2018-11-01 | 2019-02-05 |  | 1d |  |  |  | 1248h |
| 104 | 5.1 | **Web Dev** |  | 8d | 2018-11-01 | 2018-11-09 |  | 36d |  |  |  | 64h |
| 105 | 5.1.1 | Test scenarios |  | 4d | 2018-11-01 | 2018-11-05 | 14 | 36d | 0d | finish no earlier than 2018-11-05 | Lead QA | 32h |
| 106 | 5.1.2 | Test Cases |  | 4d | 2018-11-06 | 2018-11-09 | 105 | 36d | 6d | finish no earlier than 2018-10-18 | Lead QA | 32h |
| 107 | 5.2 | **Mobile Dev** |  | 8d | 2018-11-15 | 2018-11-23 |  | 54d |  |  |  | 64h |
| 108 | 5.2.1 | Test Scenarios |  | 4d | 2018-11-15 | 2018-11-19 |  | 54d | 0d | start no earlier than 2018-11-15 | Lead QA | 32h |
| 109 | 5.2.2 | Test Cases |  | 4d | 2018-11-20 | 2018-11-23 | 108 | 54d |  |  | Lead QA | 32h |
| 110 | 5.3 | **Functional Testing** |  | 52d | 2018-11-19 | 2019-01-28 |  | 7d |  |  |  | 1072h |
| 111 | 5.3.1 | **Web App** |  | 52d | 2018-11-19 | 2019-01-28 |  | 7d |  |  |  | 376h |
| 112 | 5.3.1.1 | Module testing |  | 20d | 2018-11-19 | 2018-12-14 | 106 | 30d | 1d | start no earlier than 2018-11-19 | QA 1 | 160h |
| 113 | 5.3.1.2 | Test component modules to product specifications |  | 3d | 2018-12-18 | 2018-12-20 | 112 | 29d | 0d | finish no earlier than 2018-12-20 | QA 1 | 24h |
| 114 | 5.3.1.3 | Identify anomalies to product specifications |  | 6d | 2018-12-21 | 2018-12-27 | 113 | 29d |  | finish no earlier than 2018-12-27 | QA 1 | 48h |
| 115 | 5.3.1.4 | Modify code |  | 4d | 2019-01-09 | 2019-01-14 | 66 | 0d |  | finish no earlier than 2018-12-28 | Developer 1; Developer 2 | 64h |
| 116 | 5.3.1.5 | Re-test modified code |  | 10d | 2019-01-15 | 2019-01-28 | 115 | 0d |  | start no earlier than 2019-01-02 | QA 1 | 80h |
| 117 | 5.3.1.6 | Functional testing complete | milestone | 0d | 2019-01-28 | 2019-01-28 | 116 | 0d |  |  |  |  |
| 118 | 5.3.2 | **Mobile App** |  | 41.01d | 2018-12-03 | 2019-01-28 |  | 7.99d |  |  |  | 696h |
| 119 | 5.3.2.1 | Module Testing |  | 20d | 2018-12-03 | 2018-12-27 | 106 | 26d | 0d | start no earlier than 2018-12-03 | QA 3; QA 4; QA 2 | 480h |
| 120 | 5.3.2.2 | Test component modules to product specifications |  | 2d | 2018-12-28 | 2018-12-31 | 119 | 26d | 0d |  | QA 3; QA 4; QA 2 | 48h |
| 121 | 5.3.2.3 | Identify anomalies to product specifications |  | 1d | 2019-01-01 | 2019-01-01 | 120 | 26d |  |  | QA 3; QA 4; QA 2 | 24h |
| 122 | 5.3.2.4 | Modify code |  | 6d | 2019-01-16 | 2019-01-24 | 102 | 7.99d | 0d |  | Android Dev; IOS Dev | 96h |
| 123 | 5.3.2.5 | Re-test modified code |  | 2d | 2019-01-24 | 2019-01-28 | 122 | 7.99d | 0d |  | QA 3; QA 4; QA 2 | 48h |
| 124 | 5.3.2.6 | Functional testing complete | milestone | 0d | 2019-01-28 | 2019-01-28 | 123 | 7.99d |  |  |  |  |
| 125 | 5.4 | **Integration Testing** |  | 6d | 2019-01-29 | 2019-02-05 |  | 0d |  |  |  | 48h |
| 126 | 5.4.1 | Test module integration |  | 2d | 2019-01-29 | 2019-01-30 | 117 | 0d |  |  | Testers | 16h |
| 127 | 5.4.2 | Identify anomalies to specifications |  | 1d | 2019-01-31 | 2019-01-31 | 126 | 0d |  |  | Testers | 8h |
| 128 | 5.4.3 | Modify code |  | 2d | 2019-02-01 | 2019-02-04 | 127 | 0d |  |  | Development Team | 16h |
| 129 | 5.4.4 | Re-test modified code |  | 1d | 2019-02-05 | 2019-02-05 | 128 | 0d |  |  | Testers | 8h |
| 130 | 5.4.5 | Integration testing complete | milestone | 0d | 2019-02-05 | 2019-02-05 | 129 | 0d |  |  |  |  |

| ID | WBS | Task | Type | Duration | Start | Finish | Predecessors | Total slack | Resources | Work |
| --- | --- | --- | --- | --- | --- | --- | --- | --- | --- | --- |
| 131 | 6 | **Deployment** |  | 1d | 2019-02-05 | 2019-02-06 |  | 0d |  | 8h |
| 132 | 6.1 | Determine final deployment strategy | milestone | 0d | 2019-02-05 | 2019-02-05 | 130 | 0d | Deployment Team |  |
| 133 | 6.2 | Deploy software |  | 1d | 2019-02-06 | 2019-02-06 | 132 | 0d | Deployment Team | 8h |
| 134 | 6.3 | Deployment complete | milestone | 0d | 2019-02-06 | 2019-02-06 | 133 | 0d |  |  |
