# Software Development

Schedule from MS Project, 2018-10-10 to 2019-03-21, costs in $, A marks actual dates.

## Calendars

- Standard: Mon-Fri 08:00-12:00, 13:00-17:00; Sat-Sun off. Exceptions (off unless hours are given): 2018-10-20 08:00-12:00, 13:00-17:00, 2018-11-03 08:00-12:00, 13:00-17:00, 2018-11-17 08:00-12:00, 13:00-17:00, 2018-11-24 08:00-12:00, 13:00-17:00, 2018-12-01 08:00-12:00, 13:00-17:00, 2018-12-15 08:00-12:00, 13:00-17:00, 2018-12-22 08:00-12:00, 13:00-17:00, 2018-12-29 08:00-12:00, 13:00-17:00, 2019-01-05 08:00-12:00, 13:00-17:00, 2019-01-19 08:00-12:00, 13:00-17:00, 2019-02-09 08:00-12:00, 13:00-17:00, 2019-02-16 08:00-12:00, 13:00-17:00.

## Resources

| Resource | Rate |
| --- | --- |
| Management |  |
| Project Manager |  |
| Analyst 1 |  |
| Developer 1 |  |
| Testers |  |
| Trainers |  |
| Technical Communicators |  |
| Deployment Team |  |
| PWC |  |
| UI/UX 1 |  |
| Developer 2 |  |
| Development Team |  |
| Developer 3 |  |
| Analyst 2 |  |
| UI/UX 2 | 8 |
| UI | 8 |
| Android / IOS Dev 1 |  |
| Android / iOS Dev 2 |  |
| Android Dev |  |
| IOS Dev | 12 |
| QA 1 | 8 |
| Lead QA | 9 |
| QA 2 | 8 |
| QA 3 | 8 |
| QA 4 | 8 |
| Developer 4 |  |

## Schedule

| ID | WBS | Task | Type | Duration | Start | Finish | Predecessors | Complete | Total slack | Free slack | Constraint | Resources | Work | Actual work | Cost |
| --- | --- | --- | --- | --- | --- | --- | --- | --- | --- | --- | --- | --- | --- | --- | --- |
| 1 | 1 | **Scope** |  | 1.5d | 2018-10-15 A | 2018-10-16 A |  | 100% |  |  |  |  | 12h | 12h |  |
| 2 | 1.1 | Determine project scope |  | 4h | 2018-10-15 A | 2018-10-15 A |  | 100% |  |  | start no earlier than 2018-10-15 | Management | 4h | 4h |  |
| 3 | 1.2 | Secure core resources |  | 1d | 2018-10-15 A | 2018-10-16 A | 2 | 100% |  |  |  | Project Manager | 8h | 8h |  |
| 4 | 1.3 | Scope complete | milestone | 0d | 2018-10-16 A | 2018-10-16 A | 3 | 100% |  |  |  |  |  |  |  |
| 5 | 2 | **Analysis/Software Requirements** |  | 23d | 2018-10-22 A | 2018-11-19 A |  | 100% |  |  |  |  | 224h | 224h |  |
| 6 | 2.1 | Draft SRS(Admin) |  | 2d | 2018-11-02 A | 2018-11-03 A | 4 | 100% |  |  | finish no earlier than 2018-11-03 | Analyst 1 | 16h | 16h |  |
| 7 | 2.2 | Review SRS (PWC + Verbat Meet up) |  | 3d | 2018-11-05 A | 2018-11-07 A | 6 | 100% |  |  | start no earlier than 2018-10-31 | PWC; Management; Project Manager | 72h | 72h |  |
| 8 | 2.3 | Incorporate feedback on SRS(Admin+Mobile+Phase 1 Changes) |  | 5d | 2018-11-08 A | 2018-11-14 A | 7 | 100% |  |  | start no earlier than 2018-11-05 | Analyst 1 | 40h | 40h |  |
| 9 | 2.4 | Update delivery Schedule |  | 1d | 2018-11-15 A | 2018-11-15 A | 8 | 100% |  |  |  | Project Manager | 8h | 8h |  |
| 10 | 2.5 | Admin SRS Approval |  | 2d | 2018-11-16 A | 2018-11-17 A | 9 | 100% |  |  | finish no earlier than 2018-11-09 | PWC | 16h | 16h |  |
| 11 | 2.6 | Phase 1 Changes SRS Approval |  | 3d | 2018-11-08 A | 2018-11-12 A | 10 | 100% |  |  | finish no earlier than 2018-11-12 | PWC | 24h | 24h |  |
| 12 | 2.7 | Mobile SRS Approval |  | 5d | 2018-11-13 A | 2018-11-17 A | 11 | 100% |  |  | finish no earlier than 2018-11-14 | PWC | 40h | 40h |  |
| 13 | 2.8 | Japanese Text |  | 1d | 2018-11-19 A | 2018-11-19 A | 12 | 100% |  |  |  | PWC | 8h | 8h |  |
| 14 | 2.9 | Analysis complete | manual | 1d | 2018-10-22 A | 2018-10-22 A | 13 | 100% |  |  |  |  |  |  |  |
| 15 | 3 | **Design** |  | 25d? | 2018-11-03 | 2018-12-03 |  |  | 5d |  |  |  | 320h |  | 960 |
| 16 | 3.1 | Develop prototype(Admin) |  | 6d | 2018-11-13 | 2018-11-19 |  |  | 89d | 0d | finish no earlier than 2018-11-19 | UI/UX 1 | 48h |  |  |
| 17 | 3.2 | Approval of Admin prototype |  | 4d | 2018-11-20 | 2018-11-23 | 16 |  | 89d | 0d | finish no earlier than 2018-11-22 | PWC | 32h |  |  |
| 18 | 3.3 | Database Design |  | 2d | 2018-11-24 | 2018-11-26 | 17 |  | 89d | 0d | start no earlier than 2018-10-22 | Development Team | 16h |  |  |
| 19 | 3.4 | Obtain approval to proceed |  | 8h | 2018-11-27 | 2018-11-27 | 18 |  | 89d |  | start no earlier than 2018-10-24 | Management | 8h |  |  |
| 20 | 3.5 | Mobile Initial Design |  | 5d | 2018-11-03 | 2018-11-08 |  |  | 85d | 0d | finish no earlier than 2018-11-08 | UI/UX 2 | 40h |  | 320 |
| 21 | 3.6 | Mobile Initial Design Approval |  | 12d | 2018-11-15 | 2018-12-03 | 20 |  | 84d |  | finish no earlier than 2018-11-22 | PWC | 96h |  |  |
| 22 | 3.7 | Front End New Change Design | manual | 10d | 2018-11-09 | 2018-11-21 | 20 |  |  |  |  | UI/UX 2 | 80h |  | 640 |
| 23 | 4 | **Development** |  | 100d? | 2018-10-10 | 2019-02-11 |  |  | 29d |  |  |  | 1988h |  | 5,904 |
| 24 | 4.1 | **Web Admin** |  | 67d? | 2018-10-10 | 2018-12-31 |  |  | 40d |  |  |  | 588h |  |  |
| 25 | 4.1.1 | Master Data Management |  | 3d | 2018-11-07 | 2018-11-09 |  |  | 60d | 0d | start no earlier than 2018-11-07 | Developer 1 | 24h |  |  |
| 26 | 4.1.2 | Logging, Auditing, event logs, Security, Brush up |  | 3d | 2018-11-07 | 2018-11-09 |  |  | 92.5d | 0d | start no earlier than 2018-11-07 | Developer 2 | 24h |  |  |
| 27 | 4.1.3 | Plan Management |  | 4d | 2018-11-12 | 2018-11-15 | 25 |  | 60d | 0d | start no earlier than 2018-11-12 | Developer 1 | 32h |  |  |
| 28 | 4.1.4 | Manage Corp Clients |  | 4d | 2018-11-12 | 2018-11-15 | 26 |  | 92.5d | 0d | start no earlier than 2018-11-12 | Developer 2 | 32h |  |  |
| 29 | 4.1.5 | Discount |  | 1.5d | 2018-11-16 | 2018-11-17 | 28 |  | 92.5d | 0.5d | start no earlier than 2018-11-16 | Developer 2 | 12h |  |  |
| 30 | 4.1.6 | Revise Return Fee |  | 2d | 2018-11-16 | 2018-11-17 | 27 |  | 60d | 0d | start no earlier than 2018-11-16 | Developer 1 | 16h |  |  |
| 31 | 4.1.7 | Notification Management |  | 2d | 2018-11-19 | 2018-11-20 | 30 |  | 60d | 0d | start no earlier than 2018-11-17 | Developer 1 | 16h |  |  |
| 32 | 4.1.8 | Tax Day Count Down |  | 2d | 2018-11-21 | 2018-11-22 | 31 |  | 60d | 0d | start no earlier than 2018-11-20 | Developer 1 | 16h |  |  |
| 33 | 4.1.9 | Resubmit returns |  | 1d? | 2018-11-19 | 2018-11-19 | 29 |  | 92d | 2d | start no earlier than 2018-11-19 | Developer 2 | 8h |  |  |
| 34 | 4.1.10 | Video Management |  | 2d | 2018-11-23 | 2018-11-24 | 32 |  | 60d | 3d | start no earlier than 2018-11-23 | Developer 1 | 16h |  |  |
| 35 | 4.1.11 | Super Admin |  | 2d | 2018-11-20 | 2018-11-21 |  |  | 77d | 11d | start no earlier than 2018-11-20 | Developer 2 | 16h |  |  |
| 36 | 4.1.12 | User management with roles & entitlements |  | 2d | 2018-11-22 | 2018-11-23 | 33 |  | 90d | 29d | start no earlier than 2018-11-22 | Developer 2 | 16h |  |  |
| 37 | 4.1.13 | Dashboard Updates |  | 3d | 2018-11-26 | 2018-11-28 |  |  | 88d |  | start no earlier than 2018-11-26 | Developer 1 | 24h |  |  |
| 38 | 4.1.14 | Help Center - Unassigned | milestone, manual | 0d | 2018-11-29 | 2018-11-29 | 34 |  |  |  | start no earlier than 2018-11-29 |  |  |  |  |
| 39 | 4.1.15 | End user Listing: Year wise user management screen |  | 2d | 2018-12-29 | 2018-12-31 | 36 |  | 61d |  | start no earlier than 2018-12-29 | Developer 1 | 16h |  |  |
| 40 | 4.1.16 | Reports(5) |  | 5d | 2018-11-30 | 2018-12-05 | 38 |  | 56d | 0d | start no earlier than 2018-11-30 | Developer 2; Developer 1 | 80h |  |  |
| 41 | 4.1.17 | Front End |  | 17d | 2018-10-10 | 2018-10-31 |  |  | 111d |  |  |  |  |  |  |
| 42 | 4.1.18 | Implementaion of domain name instead of IP |  | 2d | 2018-12-06 | 2018-12-07 | 35 |  | 66d | 0d | start no earlier than 2018-12-05 | Developer 1 | 16h |  |  |
| 43 | 4.1.19 | Plan Upgrade (change selected plan) |  | 4d | 2018-12-06 | 2018-12-11 | 40 |  | 57d | 0d | start no earlier than 2018-12-05 | Developer 2 | 32h |  |  |
| 44 | 4.1.20 | Implementaion of Help |  | 3d | 2018-12-10 | 2018-12-12 | 42 |  | 66d | 0d | start no earlier than 2018-12-07 | Developer 1 | 24h |  |  |
| 45 | 4.1.21 | Enabling and disabling feature for the master data in the admin |  | 1d | 2018-12-12 | 2018-12-12 | 43 |  | 57d | 0d | start no earlier than 2018-12-11 | Developer 2 | 8h |  |  |
| 46 | 4.1.22 | All the Deduction tabs to be consolidated to a single page/form |  | 1d | 2018-12-13 | 2018-12-13 | 45 |  | 57d | 0d | start no earlier than 2018-12-12 | Developer 2 | 8h |  |  |
| 47 | 4.1.23 | New main tab for foreign assests with new features |  | 5d | 2018-12-13 | 2018-12-18 | 44 |  | 66d | 0d | start no earlier than 2018-12-12 | Developer 1 | 40h |  |  |
| 48 | 4.1.24 | Dashboard - Tax summary 2 tabs to show revised |  | 1d | 2018-12-19 | 2018-12-19 | 47 |  | 66d | 0d | start no earlier than 2018-12-19 | Developer 1 | 8h |  |  |
| 49 | 4.1.25 | Revise return |  | 1d | 2018-12-14 | 2018-12-14 | 46 |  | 57d | 0d | start no earlier than 2018-12-13 | Developer 2 | 8h |  |  |
| 50 | 4.1.26 | Review to show sub section status |  | 1d | 2018-12-20 | 2018-12-20 | 48 |  | 66d | 0d | start no earlier than 2018-12-20 | Developer 1 | 8h |  |  |
| 51 | 4.1.27 | Plan change auditing |  | 2d | 2018-12-15 | 2018-12-17 | 49 |  | 57d | 0d | start no earlier than 2018-12-14 | Developer 2 | 16h |  |  |
| 52 | 4.1.28 | Currency field along with amount field |  | 4d | 2018-12-21 | 2018-12-25 | 50 |  | 66d | 0d | start no earlier than 2018-12-21 | Developer 1 | 32h |  |  |
| 53 | 4.1.29 | The system should alert the user during Multiple Login. Upon clicking “Confirm”, the system should log out the user from the previous session. |  | 2d | 2018-12-18 | 2018-12-19 | 51 |  | 57d | 0d | finish no earlier than 2018-12-18 | Developer 2 | 16h |  |  |
| 54 | 4.1.30 | Minor changes(Estimated) |  | 3d | 2018-12-20 | 2018-12-22 | 53 |  | 57d | 0d | start no earlier than 2018-12-19 | Developer 2 | 24h |  |  |
| 55 | 4.1.31 | Development complete | milestone | 0d | 2018-12-25 | 2018-12-25 | 52 |  | 66d |  |  |  |  |  |  |

| ID | WBS | Task | Type | Duration | Start | Finish | Predecessors | Total slack | Free slack | Constraint | Resources | Work | Cost |
| --- | --- | --- | --- | --- | --- | --- | --- | --- | --- | --- | --- | --- | --- |
| 56 | 4.2 | **Web API** |  | 32d | 2018-11-23 | 2018-12-31 |  |  |  |  |  | 216h |  |
| 57 | 4.2.1 | Login and Sign Up Management |  | 4d | 2018-11-24 | 2018-11-28 |  | 36d | 0d | finish no earlier than 2018-11-28 | Developer 3 | 32h |  |
| 58 | 4.2.2 | Assessment year |  | 1d | 2018-11-29 | 2018-11-29 | 57 | 36d | 0d | start no earlier than 2018-11-29 | Developer 3 | 8h |  |
| 59 | 4.2.3 | Plan selection |  | 2d | 2018-11-30 | 2018-12-01 | 58 | 36d | 0d | start no earlier than 2018-11-30 | Developer 3 | 16h |  |
| 60 | 4.2.4 | XML Uploads |  | 2d | 2018-12-03 | 2018-12-04 | 59 | 36d | 0d | start no earlier than 2018-12-03 | Developer 3 | 16h |  |
| 61 | 4.2.5 | Tax filing |  | 15d | 2018-12-05 | 2018-12-22 | 60 | 36d | 3d | start no earlier than 2018-12-05 | Developer 3 | 120h |  |
| 62 | 4.2.6 | Dashboard Updates |  | 3d | 2018-12-27 | 2018-12-29 | 61 | 33d | 0d | start no earlier than 2018-12-27 | Developer 3 | 24h |  |
| 63 | 4.2.7 | Development complete | manual | 1d | 2018-12-31 | 2018-12-31 | 62 |  |  |  |  |  |  |
| 64 | 4.3 | **Japanese Langauge integration** |  | 28d | 2018-12-31 | 2019-02-05 |  | 34d |  |  |  | 200h |  |
| 65 | 4.3.1 | Create Resource File | milestone | 0d | 2018-12-31 | 2018-12-31 | 63 | 33d | 0d | start no earlier than 2018-12-05 | Developer 3 |  |  |
| 66 | 4.3.2 | Create Multi language Routes and Route handling mechanism (includes SEO) | milestone | 0d | 2018-12-31 | 2018-12-31 | 65 | 33d | 0d | start no earlier than 2018-12-05 | Developer 3 |  |  |
| 67 | 4.3.3 | Activate Culture & Upgrade content, labels and form values | milestone | 0d | 2018-12-31 | 2018-12-31 | 66 | 33d | 0d | start no earlier than 2018-12-05 | Developer 3 |  |  |
| 68 | 4.3.4 | Total # of pages to modify 78 |  | 25d | 2019-01-01 | 2019-02-05 | 67 | 34d | 0d | start no earlier than 2018-12-05 | Developer 3 | 200h |  |
| 69 | 4.3.5 | Development complete | milestone | 0d | 2019-02-05 | 2019-02-05 | 68 | 33d |  | start no earlier than 2019-01-03 |  |  |  |
| 70 | 4.4 | **Mobile App** |  | 66d | 2018-11-22 | 2019-02-11 |  | 7d |  |  |  | 984h | 5,904 |
| 71 | 4.4.1 | Splash Screen, Login etc. |  | 2d | 2018-11-22 | 2018-11-23 |  | 33.5d | 0d | start no earlier than 2018-11-22 | Android Dev; IOS Dev | 32h | 192 |
| 72 | 4.4.2 | Registration |  | 2d | 2018-11-24 | 2018-11-26 | 71 | 33.5d | 0d | finish no earlier than 2018-11-26 | Android Dev; IOS Dev | 32h | 192 |
| 73 | 4.4.3 | Home page |  | 1d | 2018-11-27 | 2018-11-27 | 72 | 33.5d | 0d | start no earlier than 2018-11-27 | IOS Dev; Android Dev | 16h | 96 |
| 74 | 4.4.4 | Dashboard(Tax Summary, Chellan, Filter, Uploaded docs, ITR related docs, Approve, Notifications, Yearly Summary) |  | 2d | 2018-11-28 | 2018-11-29 | 73 | 33.5d | 0d | start no earlier than 2018-11-28 | Android Dev; IOS Dev | 32h | 192 |
| 75 | 4.4.5 | OTP verification page | manual | 4h | 2018-11-30 | 2018-11-30 | 74 |  |  | start no earlier than 2018-11-30 | Android Dev; IOS Dev | 8h | 48 |
| 76 | 4.4.6 | Video |  | 1.5d | 2018-11-30 | 2018-12-01 | 75 | 33.5d | 0d | start no earlier than 2018-11-30 | Android Dev; IOS Dev | 24h | 144 |
| 77 | 4.4.7 | Pricing and comparision page |  | 2d | 2018-12-03 | 2018-12-04 | 76 | 33.5d | 0d | start no earlier than 2018-12-03 | Android Dev; IOS Dev | 32h | 192 |
| 78 | 4.4.8 | Platinum Plan Notification | manual | 4h | 2018-12-05 | 2018-12-05 | 77 |  |  |  | Android Dev; IOS Dev | 8h | 48 |
| 79 | 4.4.9 | XML upload from different storage space |  | 1.5d | 2018-12-05 | 2018-12-06 | 78 | 33.5d | 0d | start no earlier than 2018-12-05 | Android Dev; IOS Dev | 24h | 144 |
| 80 | 4.4.10 | Implementaion of Help (video, image) |  | 1.5d | 2018-12-07 | 2018-12-10 | 79 | 33.5d | 0d | start no earlier than 2018-12-07 | Android Dev; IOS Dev | 24h | 144 |
| 81 | 4.4.11 | Plan change auditing |  | 2d | 2018-12-10 | 2018-12-12 | 80 | 32.5d | 0d | start no earlier than 2018-12-10 | Android Dev; IOS Dev | 32h | 192 |
| 82 | 4.4.12 | Revise return |  | 1d | 2018-12-12 | 2018-12-13 | 81 | 32.5d | 0d | start no earlier than 2018-12-12 | Android Dev; IOS Dev | 16h | 96 |
| 83 | 4.4.13 | Tax summary 2 tabs to show revised |  | 1d | 2018-12-13 | 2018-12-14 | 82 | 32.5d | 0.5d | start no earlier than 2018-12-13 | Android Dev; IOS Dev | 16h | 96 |
| 84 | 4.4.14 | Currency field along with amount field (Design Change) |  | 2d | 2018-12-15 | 2018-12-17 | 83 | 32d | 0d | start no earlier than 2018-12-15 | Android Dev; IOS Dev | 32h | 192 |
| 85 | 4.4.15 | XML prefill controls to be grouped (only Design Change) |  | 1d | 2018-12-18 | 2018-12-18 | 84 | 32d | 0d | start no earlier than 2018-12-18 | Android Dev; IOS Dev | 16h | 96 |
| 86 | 4.4.16 | Foreign Assets |  | 5d | 2018-12-19 | 2018-12-24 | 85 | 32d | 1d | start no earlier than 2018-12-19 | Android Dev; IOS Dev | 80h | 480 |
| 87 | 4.4.17 | Start Tax Return (Year / Package selection, Prefill XML / PAN) |  | 2d | 2018-12-26 | 2018-12-27 | 86 | 31d | 0d | start no earlier than 2018-12-26 | Android Dev; IOS Dev | 32h | 192 |
| 88 | 4.4.18 | Personal details |  | 2d | 2018-12-28 | 2018-12-29 | 87 | 31d | 2d | start no earlier than 2018-12-28 | Android Dev; IOS Dev | 32h | 192 |
| 89 | 4.4.19 | Bank Details |  | 2d | 2019-01-02 | 2019-01-03 | 88 | 29d | 0d | start no earlier than 2019-01-02 | Android Dev; IOS Dev | 32h | 192 |
| 90 | 4.4.20 | Assets & Liabelities |  | 3d | 2019-01-04 | 2019-01-07 | 89 | 29d | 1d | start no earlier than 2019-01-04 | Android Dev; IOS Dev | 48h | 288 |
| 91 | 4.4.21 | Salary |  | 2d | 2019-01-09 | 2019-01-10 | 90 | 28d | 0d | start no earlier than 2019-01-09 | Android Dev; IOS Dev | 32h | 192 |
| 92 | 4.4.22 | Other Income |  | 3d | 2019-01-11 | 2019-01-15 | 91 | 28d | 0d | start no earlier than 2019-01-11 | Android Dev; IOS Dev | 48h | 288 |
| 93 | 4.4.23 | House property |  | 3d | 2019-01-16 | 2019-01-18 | 92 | 28d | 0d | start no earlier than 2019-01-16 | Android Dev; IOS Dev | 48h | 288 |
| 94 | 4.4.24 | Section 80 |  | 3d | 2019-01-19 | 2019-01-22 | 93 | 28d | 0d | start no earlier than 2019-01-19 | Android Dev; IOS Dev | 48h | 288 |
| 95 | 4.4.25 | More Deductions (80E, 80CCC etc.) |  | 3d | 2019-01-23 | 2019-01-25 | 94 | 28d | 0d | start no earlier than 2019-01-23 | Android Dev; IOS Dev | 48h | 288 |
| 96 | 4.4.26 | Taxes paid (Upload 26AS, Challan Details, Summary & review, PDF report, Payment) |  | 3d | 2019-01-28 | 2019-01-30 | 95 | 28d | 0d | start no earlier than 2019-01-28 | Android Dev; IOS Dev | 48h | 288 |
| 97 | 4.4.27 | Help center (Chat bot, Whats new) |  | 3d | 2019-01-31 | 2019-02-04 | 96 | 28d | 0d | start no earlier than 2019-01-31 | Android Dev; IOS Dev | 48h | 288 |
| 98 | 4.4.28 | Static Pages (FAQ, T&C, Privacy, legal, support, Contact) |  | 3d | 2019-02-05 | 2019-02-07 | 97 | 28d | 0d | start no earlier than 2019-02-05 | Android Dev; IOS Dev | 48h | 288 |
| 99 | 4.4.29 | API integration |  | 3d | 2019-02-08 | 2019-02-11 | 98 | 28d |  | start no earlier than 2019-02-08 | Android Dev; IOS Dev | 48h | 288 |

| ID | WBS | Task | Duration | Start | Finish | Predecessors | Total slack | Free slack | Constraint | Resources | Work | Cost |
| --- | --- | --- | --- | --- | --- | --- | --- | --- | --- | --- | --- | --- |
| 100 | 5 | **Testing** | 96d | 2018-11-20 | 2019-03-20 |  | 1d |  |  |  | 1096h | 6,456 |
| 101 | 5.1 | Test Plan | 4d | 2018-11-20 | 2018-11-23 |  | 82d | 1d | start no earlier than 2018-11-20 | Lead QA | 32h | 288 |
| 102 | 5.2 | Requirement Tracability Matrix | 5d | 2018-11-28 | 2018-12-03 |  | 85d |  | start no earlier than 2018-11-28 | QA 1 | 40h | 320 |
| 103 | 5.3 | **Web Dev** | 5d | 2018-11-26 | 2018-11-30 |  | 81d |  |  |  | 40h | 360 |
| 104 | 5.3.1 | Test Cases | 5d | 2018-11-26 | 2018-11-30 | 101 | 81d | 1d | start no earlier than 2018-11-26 | Lead QA | 40h | 360 |
| 105 | 5.4 | **Mobile Dev** | 6d | 2018-12-03 | 2018-12-10 |  | 80d |  |  |  | 48h | 432 |
| 106 | 5.4.1 | Test Cases | 6d | 2018-12-03 | 2018-12-10 | 104 | 80d |  | finish no earlier than 2018-12-10 | Lead QA | 48h | 432 |
| 107 | 5.5 | **Functional Testing** | 73d | 2018-12-04 | 2019-03-05 |  | 0d |  |  |  | 672h | 5,056 |
| 108 | 5.5.1 | **Web App** | 38d | 2018-12-04 | 2019-01-18 |  |  |  |  |  | 184h | 1,216 |
| 109 | 5.5.1.1 | **Front End Changes** | 12d | 2018-12-24 | 2019-01-05 |  |  |  |  |  | 32h | 256 |
| 110 | 5.5.1.1.1 | Module testing | 4d | 2018-12-24 | 2018-12-27 | 54 | 57d | 0d | start no earlier than 2018-12-24 | QA 1 | 32h | 256 |
| 111 | 5.5.1.1.2 | Modify code | 4d | 2018-12-28 | 2019-01-01 | 110 | 57d | 0d | start no earlier than 2018-12-28 |  |  |  |
| 112 | 5.5.1.2 | Re-test modified code | 4d | 2019-01-02 | 2019-01-05 | 111 | 57d |  | start no earlier than 2019-01-02 | QA 1 | 32h | 256 |
| 113 | 5.5.1.3 | **Admin** | 31d | 2018-12-06 | 2019-01-11 |  | 52d |  |  |  | 120h | 704 |
| 114 | 5.5.1.3.1 | Module Testing | 7d | 2018-12-06 | 2018-12-14 | 40 | 56d | 16d | start no earlier than 2018-12-06 | QA 1 | 56h | 448 |
| 115 | 5.5.1.3.2 | Modify code | 4d | 2019-01-03 | 2019-01-07 | 114 | 52d | 0d | start no earlier than 2019-01-03 | Development Team | 32h |  |
| 116 | 5.5.1.3.3 | Re-test modified code | 4d | 2019-01-08 | 2019-01-11 | 115 | 52d |  | start no earlier than 2019-01-08 | QA 1 | 32h | 256 |
| 117 | 5.5.2 | **Mobile App** | 21d | 2019-02-07 | 2019-03-05 |  |  |  |  |  | 488h | 3,840 |
| 118 | 5.5.2.1 | Module Testing | 10d | 2019-02-07 | 2019-02-18 |  | 1d | 0d | start no earlier than 2019-02-07 | QA 3; QA 4; QA 2 | 240h | 1,920 |
| 119 | 5.5.2.2 | Identify anomalies to product specifications | 2d | 2019-02-19 | 2019-02-20 | 118 | 1d | 0d | start no earlier than 2019-02-19 | QA 3; QA 4; QA 2 | 48h | 384 |
| 120 | 5.5.2.3 | Modify code | 2d | 2019-02-21 | 2019-02-22 | 119 | 11d | 0d | start no earlier than 2019-02-21 | Android Dev; IOS Dev | 32h | 192 |
| 121 | 5.5.2.4 | Re-test modified code | 7d | 2019-02-25 | 2019-03-05 | 120 | 11d |  | start no earlier than 2019-02-25 | QA 3; QA 4; QA 2 | 168h | 1,344 |
| 122 | 5.6 | **Integration Testing** | 56d | 2019-01-07 | 2019-03-20 |  | 0d |  |  |  | 264h |  |
| 123 | 5.6.1 | **Web App** | 19d | 2019-01-07 | 2019-01-30 |  |  |  |  |  | 80h |  |
| 124 | 5.6.1.1 | Test module integration | 10d | 2019-01-07 | 2019-01-18 | 114 | 37d | 0d | start no earlier than 2019-01-07 | Testers | 80h |  |
| 125 | 5.6.2 | Identify anomalies to specifications | 1d | 2019-01-19 | 2019-01-19 | 124 | 37d | 0d | start no earlier than 2019-01-19 | Testers | 8h |  |
| 126 | 5.6.3 | Modify code | 2d | 2019-01-21 | 2019-01-22 | 125 | 37d | 0d | start no earlier than 2019-01-21 | Development Team | 16h |  |
| 127 | 5.6.4 | Re-test modified code | 3d | 2019-01-23 | 2019-01-25 | 126 | 37d | 0d | start no earlier than 2019-01-23 | Testers | 24h |  |
| 128 | 5.6.5 | Integration testing complete | 3d | 2019-01-28 | 2019-01-30 | 127 | 37d | 0d | start no earlier than 2019-01-28 |  |  |  |

| ID | WBS | Task | Type | Duration | Start | Finish | Predecessors | Total slack | Free slack | Constraint | Resources | Work |
| --- | --- | --- | --- | --- | --- | --- | --- | --- | --- | --- | --- | --- |
| 129 | 5.6.6 | **Mobile App** |  | 20d | 2019-02-21 | 2019-03-20 |  | 0d |  |  |  | 136h |
| 130 | 5.6.6.1 | Test module integration |  | 10d | 2019-02-21 | 2019-03-06 | 119 | 1d | 0d | start no earlier than 2019-02-21 | Testers | 80h |
| 131 | 5.6.6.2 | Identify anomalies to specifications |  | 1d | 2019-03-07 | 2019-03-07 | 130 | 1d |  | start no earlier than 2019-03-07 | Testers | 8h |
| 132 | 5.6.6.3 | Modify code |  | 2d | 2019-03-11 | 2019-03-12 | 131 | 0d |  | start no earlier than 2019-03-11 | Development Team | 16h |
| 133 | 5.6.6.4 | Re-test modified code |  | 4d | 2019-03-13 | 2019-03-18 | 132 | 0d |  | start no earlier than 2019-03-13 | Testers | 32h |
| 134 | 5.6.6.5 | Integration testing complete |  | 2d | 2019-03-19 | 2019-03-20 | 133 | 0d |  | start no earlier than 2019-03-19 |  |  |
| 135 | 6 | **Deployment** |  | 38d | 2019-01-30 | 2019-03-21 |  | 0d |  |  |  | 16h |
| 136 | 6.1 | Determine final deployment strategy | milestone | 0d | 2019-01-30 | 2019-01-30 | 128 | 36d | 0d |  | Deployment Team |  |
| 137 | 6.2 | Deploy web+admin+Japanese Applications |  | 1d | 2019-01-31 | 2019-01-31 | 136 | 37d |  |  | Deployment Team | 8h |
| 138 | 6.3 | Deploy Mobile apps |  | 1d | 2019-03-21 | 2019-03-21 | 134 | 0d |  |  | Deployment Team | 8h |
| 139 | 6.4 | Deployment complete | milestone | 0d | 2019-03-21 | 2019-03-21 | 138 | 0d |  |  |  |  |
