# Sharaja Tourism

Schedule from ProjectLibre, 2017-06-14 to 2017-11-02.

## Calendars

- Standard: Mon-Fri 08:00-12:00, 13:00-17:00; Sat-Sun off.

## Resources

| Resource |
| --- |
| Unassigned |
| dev1 |
| dev2 |
| Dev3 |
| Design |
| QA1 |
| BA |
| PM |
| MobileDev1 |
| QA2 |
| MobileDev2 |

## Schedule

| ID | WBS | Task | Duration | Start | Finish | Predecessors | Total slack | Constraint | Resources |
| --- | --- | --- | --- | --- | --- | --- | --- | --- | --- |
| 1 | 1 | **Application** | 102d | 2017-06-14 | 2017-11-02 |  |  | start no earlier than 2017-06-22 |  |
| 2 | 1.1 | **Low Level Design (Milestone 1)** | 1d | 2017-06-14 | 2017-06-14 |  | 500d |  |  |
| 3 | 1.1.1 | Exploration and Discovery | 0d | 2017-06-14 | 2017-06-14 |  | 500d |  |  |
| 4 | 1.1.2 | **Analysis and Planning** | 1d | 2017-06-14 | 2017-06-14 |  | 500d |  |  |
| 5 | 1.1.2.1 | Technical Architecture | 1d | 2017-06-14 | 2017-06-14 | 3 | 500d |  |  |
| 6 | 1.2 | **Development & Testing (Milestone 2)** | 96d | 2017-06-22 | 2017-11-02 |  |  |  |  |
| 7 | 1.2.1 | **Phase 1** | 35d | 2017-06-22 | 2017-08-09 |  | 6100d |  |  |
| 8 | 1.2.1.1 | SRS Creation | 3d | 2017-06-22 | 2017-06-26 | 5 |  |  |  |
| 9 | 1.2.1.2 | SRS Confirmation | 0d | 2017-06-26 | 2017-06-26 | 8 |  |  |  |
| 10 | 1.2.1.3 | Design & Prototyping | 7d | 2017-06-27 | 2017-07-05 | 9 |  |  |  |
| 11 | 1.2.1.4 | Design & Prototyping Confirmation | 0d | 2017-07-05 | 2017-07-05 | 10 |  |  |  |
| 12 | 1.2.1.5 | FS Creation | 3d | 2017-07-06 | 2017-07-10 | 11 |  |  |  |
| 13 | 1.2.1.6 | FS Confirmation | 1d | 2017-07-11 | 2017-07-11 | 12 |  |  |  |
| 14 | 1.2.1.7 | Database Architecture | 3d | 2017-06-27 | 2017-06-29 | 8 | 9000d |  |  |
| 15 | 1.2.1.8 | Application Envirolment Creation | 1d | 2017-07-12 | 2017-07-12 | 13 |  |  | dev1 |
| 16 | 1.2.1.9 | Site Administration | 1d | 2017-07-13 | 2017-07-13 | 15 |  |  | dev1 |
| 17 | 1.2.1.10 | Permission | 4d | 2017-07-14 | 2017-07-19 | 16 |  |  | dev1 |
| 18 | 1.2.1.11 | New Application for Permits | 10d | 2017-07-20 | 2017-08-02 | 17 | 6600d |  | dev2 |
| 19 | 1.2.1.12 | Data Processing, Storage and Retrieval of applications | 4d | 2017-07-20 | 2017-07-25 | 17 |  |  | dev1 |
| 20 | 1.2.1.13 | Reports | 5d | 2017-07-26 | 2017-08-01 | 19 |  |  | dev1 |
| 21 | 1.2.1.14 | Testing | 6d | 2017-08-02 | 2017-08-09 | 20 |  |  |  |
| 22 | 1.2.1.15 | UAT Release | 0d | 2017-08-09 | 2017-08-09 | 21 |  |  |  |
| 23 | 1.2.2 | **Phase 2** | 35.83d | 2017-08-10 | 2017-09-28 |  | 2516.67d |  |  |
| 24 | 1.2.2.1 | SRS Creation | 2d | 2017-08-10 | 2017-08-11 | 22 |  |  |  |
| 25 | 1.2.2.2 | SRS Confirmation | 0d | 2017-08-11 | 2017-08-11 | 24 |  |  |  |
| 26 | 1.2.2.3 | Design & Prototyping Web & Mobile | 8d | 2017-08-14 | 2017-08-23 | 25 |  |  |  |
| 27 | 1.2.2.4 | Design & Prototyping Confirmation | 0d | 2017-08-23 | 2017-08-23 | 26 |  |  |  |
| 28 | 1.2.2.5 | FS Creation | 2d | 2017-08-24 | 2017-08-25 | 27 |  |  |  |
| 29 | 1.2.2.6 | FS Confirmation | 0d | 2017-08-25 | 2017-08-25 | 28 |  |  |  |
| 30 | 1.2.2.7 | Inspection | 20d | 2017-08-28 | 2017-09-22 | 29 | 2700d |  | MobileDev1; MobileDev2 |
| 31 | 1.2.2.8 | Fine Management | 2d | 2017-09-25 | 2017-09-26 | 30 | 2700d |  | Dev3 |
| 32 | 1.2.2.9 | API for Mobile | 13.33d | 2017-08-28 | 2017-09-14 | 29 |  |  | dev1; dev2 |
| 33 | 1.2.2.10 | Testing | 7.5d | 2017-09-14 | 2017-09-25 | 32 | 1716.67d |  | QA1; QA2 |
| 34 | 1.2.2.11 | Regression Testing | 2d | 2017-09-25 | 2017-09-27 | 33 | 1716.67d |  | dev2 |
| 35 | 1.2.2.12 | UAT | 1d | 2017-09-27 | 2017-09-28 | 34 | 1716.67d |  |  |

| ID | WBS | Task | Duration | Start | Finish | Predecessors | Total slack | Resources |
| --- | --- | --- | --- | --- | --- | --- | --- | --- |
| 36 | 1.2.3 | **Phase 3** | 35.67d | 2017-09-14 | 2017-11-02 |  |  |  |
| 37 | 1.2.3.1 | SRS Creation | 2d | 2017-09-28 | 2017-10-02 | 35 | 1716.67d |  |
| 38 | 1.2.3.2 | SRS Confirmation | 0d | 2017-10-02 | 2017-10-02 | 37 | 1716.67d |  |
| 39 | 1.2.3.3 | Design & Prototyping | 3d | 2017-10-02 | 2017-10-05 | 38 | 1716.67d |  |
| 40 | 1.2.3.4 | Design & Prototyping Confirmation | 0d | 2017-10-05 | 2017-10-05 | 39 | 1716.67d |  |
| 41 | 1.2.3.5 | FS Creation | 3d | 2017-10-05 | 2017-10-10 | 40 | 1716.67d |  |
| 42 | 1.2.3.6 | FS Confirmation | 0d | 2017-10-10 | 2017-10-10 | 41 | 1716.67d |  |
| 43 | 1.2.3.7 | Permit Cancellation | 5.33d | 2017-09-14 | 2017-09-21 | 32 |  | dev1; dev2 [50%] |
| 44 | 1.2.3.8 | Permit Renewal | 6d | 2017-09-21 | 2017-09-29 | 43 |  | dev1 |
| 45 | 1.2.3.9 | Permit (Re) Printing | 5d | 2017-09-29 | 2017-10-06 | 44 |  | dev1 |
| 46 | 1.2.3.10 | Communication and Information Delivery | 5.33d | 2017-10-06 | 2017-10-13 | 45 |  | dev1; dev2 [50%] |
| 47 | 1.2.3.11 | Guides | 3d | 2017-10-16 | 2017-10-18 | 46 |  | dev1 |
| 48 | 1.2.3.12 | Testing | 8d | 2017-10-19 | 2017-10-30 | 47 |  | dev1 |
| 49 | 1.2.3.13 | Regression Testing | 3d | 2017-10-31 | 2017-11-02 | 48 |  |  |
