Schedule from ProjectLibre, 2013-07-01 to 2014-04-25.

## Calendars

- Standard[Imported]: Mon-Fri 08:00-12:00, 13:00-17:00; Sat-Sun off. Exceptions (off unless hours are given): 2013-12-24 to 2013-12-25.

## Resources

| Resource |
| --- |
| Unassigned |
| Sr. User |
| Project Board |
| PM |
| Design |
| DBA |
| Architect |
| Team 1 |
| Team 2 |
| Team 3 |
| Tester |

## Schedule

| ID | WBS | Task | Duration | Start | Finish | Predecessors | Total slack | Constraint | Resources |
| --- | --- | --- | --- | --- | --- | --- | --- | --- | --- |
| 1 | 1 | **CheckkUp** | 213.5d | 2013-07-01 | 2014-04-25 |  |  | start no later than 2013-07-02 |  |
| 2 | 1.1 | **Initiation** | 3d | 2013-07-01 | 2013-07-03 |  |  | start no later than 2013-07-01 |  |
| 3 | 1.1.1 | Requirement Finalisation | 2d | 2013-07-01 | 2013-07-02 |  |  | start no later than 2013-07-01 | Sr. User |
| 4 | 1.1.2 | Identify Project Board Members | 1d | 2013-07-03 | 2013-07-03 | 3 |  |  | Project Board |
| 5 | 1.2 | **Planning (Stage 1)** | 13d | 2013-07-04 | 2013-07-22 | 4 |  | start no later than 2013-07-04 |  |
| 6 | 1.2.1 | Prepare Project Initiation Document | 12d | 2013-07-04 | 2013-07-19 | 4 |  |  | PM |
| 7 | 1.2.2 | Prepare Stage Plans (Intital stages only) | 1d | 2013-07-22 | 2013-07-22 | 6 |  |  | PM |
| 8 | 1.3 | **Controlling Stages** | 197.5d | 2013-07-23 | 2014-04-25 | 7 |  |  |  |
| 9 | 1.3.1 | **Design (Stage 2)** | 30d | 2013-07-23 | 2013-09-02 | 7 | 16750d |  |  |
| 10 | 1.3.1.1 | **Visual Designs** | 30d | 2013-07-23 | 2013-09-02 | 7 |  |  | Design |
| 11 | 1.3.1.1.1 | Wireframe | 10d | 2013-07-23 | 2013-08-05 | 7 |  |  | Design |
| 12 | 1.3.1.1.2 | Layout Design & HTML | 20d | 2013-08-06 | 2013-09-02 | 11 |  |  | Design |
| 13 | 1.3.1.2 | Database Model | 15d | 2013-07-23 | 2013-08-12 | 7 | 18250d |  | DBA |
| 14 | 1.3.1.3 | Functional Specification | 20d | 2013-07-23 | 2013-08-19 | 7 | 17550d |  | Architect |
| 15 | 1.3.1.4 | Functional Specification Finalisation | 2d | 2013-08-20 | 2013-08-21 | 14 | 17550d |  | PM |
| 16 | 1.3.2 | **Development (Stage 3)** | 31d | 2013-09-03 | 2013-10-15 | 12 | 13650d |  |  |
| 17 | 1.3.2.1 | Framework (Audit, Security etc) | 5d | 2013-09-03 | 2013-09-09 | 12 |  |  | Team 1 [50%]; Team 2 [50%] |
| 18 | 1.3.2.2 | **Practice Configuration** | 24d | 2013-09-10 | 2013-10-11 | 17 | 13850d |  |  |
| 19 | 1.3.2.2.1 | Registration | 5d | 2013-09-10 | 2013-09-16 | 17 | 13850d |  | Team 1 |
| 20 | 1.3.2.2.2 | Login Module | 2d | 2013-09-17 | 2013-09-18 | 19 | 13850d |  | Team 1 |
| 21 | 1.3.2.2.3 | **Settings** | 24d | 2013-09-10 | 2013-10-11 | 17 | 13850d |  |  |
| 22 | 1.3.2.2.3.1 | **Users** | 8d | 2013-09-10 | 2013-09-19 | 17 |  |  | Team 2 |
| 23 | 1.3.2.2.3.1.1 | List Users | 2d | 2013-09-10 | 2013-09-11 | 17 |  |  | Team 2 |
| 24 | 1.3.2.2.3.1.2 | Add Users | 2d | 2013-09-12 | 2013-09-13 | 23 |  |  | Team 2 |
| 25 | 1.3.2.2.3.1.3 | Edit Users | 2d | 2013-09-16 | 2013-09-17 | 24 |  |  | Team 2 |
| 26 | 1.3.2.2.3.1.4 | Delete Users | 2d | 2013-09-18 | 2013-09-19 | 25 |  |  | Team 2 |

| ID | WBS | Task | Duration | Start | Finish | Predecessors | Total slack | Resources |
| --- | --- | --- | --- | --- | --- | --- | --- | --- |
| 27 | 1.3.2.2.3.2 | **Profiles** | 5d | 2013-09-20 | 2013-09-26 | 26 |  | Team 2 |
| 28 | 1.3.2.2.3.2.1 | Profile Update | 2d | 2013-09-20 | 2013-09-23 | 26 |  | Team 2 |
| 29 | 1.3.2.2.3.2.2 | Basic Info Update | 1d | 2013-09-24 | 2013-09-24 | 28 |  | Team 2 |
| 30 | 1.3.2.2.3.2.3 | Contact Update | 2d | 2013-09-25 | 2013-09-26 | 29 |  | Team 2 |
| 31 | 1.3.2.2.3.3 | **Practice** | 13d | 2013-09-19 | 2013-10-07 | 20 | 14250d | Team 1 |
| 32 | 1.3.2.2.3.3.1 | Basic Information - Edit | 2d | 2013-09-19 | 2013-09-20 | 20 | 14250d | Team 1 |
| 33 | 1.3.2.2.3.3.2 | Identifiers - Edit | 1d | 2013-09-23 | 2013-09-23 | 32 | 14250d | Team 1 |
| 34 | 1.3.2.2.3.3.3 | **Facilities** | 3d | 2013-09-24 | 2013-09-26 | 33 | 14250d | Team 1 |
| 35 | 1.3.2.2.3.3.3.1 | Add Facilities | 2d | 2013-09-24 | 2013-09-25 | 33 | 14250d | Team 1 |
| 36 | 1.3.2.2.3.3.3.2 | Edit Facilities | 1d | 2013-09-26 | 2013-09-26 | 35 | 14250d | Team 1 |
| 37 | 1.3.2.2.3.3.4 | **Payer List** | 3d | 2013-09-19 | 2013-09-23 | 20 | 13850d | Team 3 |
| 38 | 1.3.2.2.3.3.4.1 | Add Payers | 2d | 2013-09-19 | 2013-09-20 | 20 | 13850d | Team 3 |
| 39 | 1.3.2.2.3.3.4.2 | Edit Payers | 1d | 2013-09-23 | 2013-09-23 | 38 | 13850d | Team 3 |
| 40 | 1.3.2.2.3.3.5 | Settings - Edit | 4d | 2013-09-24 | 2013-09-27 | 39 | 13850d | Team 3 |
| 41 | 1.3.2.2.3.3.6 | **Vaccine Inventory** | 3d | 2013-09-30 | 2013-10-02 | 40 | 13850d | Team 3 |
| 42 | 1.3.2.2.3.3.6.1 | Add Vaccine Lot | 2d | 2013-09-30 | 2013-10-01 | 40 | 13850d | Team 3 |
| 43 | 1.3.2.2.3.3.6.2 | Edit Vaccine Lot | 1d | 2013-10-02 | 2013-10-02 | 42 | 13850d | Team 3 |
| 44 | 1.3.2.2.3.3.7 | **Chart Note Types** | 3d | 2013-09-27 | 2013-10-01 | 36 | 14250d | Team 1 |
| 45 | 1.3.2.2.3.3.7.1 | Add Chart Note Type | 2d | 2013-09-27 | 2013-09-30 | 36 | 14250d | Team 1 |
| 46 | 1.3.2.2.3.3.7.2 | Edit Chart Note Type | 1d | 2013-10-01 | 2013-10-01 | 45 | 14250d | Team 1 |
| 47 | 1.3.2.2.3.3.8 | **Schedule Event Types** | 4d | 2013-10-02 | 2013-10-07 | 46 | 14250d | Team 1 |
| 48 | 1.3.2.2.3.3.8.1 | Add Schedule Event Types | 2d | 2013-10-02 | 2013-10-03 | 46 | 14250d | Team 1 |
| 49 | 1.3.2.2.3.3.8.2 | Edit Schedule Event Types | 2d | 2013-10-04 | 2013-10-07 | 48 | 14250d | Team 1 |
| 50 | 1.3.2.2.3.4 | **Permissions** | 5d | 2013-09-27 | 2013-10-03 | 30 |  | Team 2 |
| 51 | 1.3.2.2.3.4.1 | Add Permissions | 3d | 2013-09-27 | 2013-10-01 | 30 |  | Team 2 |
| 52 | 1.3.2.2.3.4.2 | Edit Permissions | 2d | 2013-10-02 | 2013-10-03 | 51 |  | Team 2 |

| ID | WBS | Task | Duration | Start | Finish | Predecessors | Total slack | Resources |
| --- | --- | --- | --- | --- | --- | --- | --- | --- |
| 53 | 1.3.2.2.3.5 | **Notifications & Alerts** | 7d | 2013-10-03 | 2013-10-11 | 43 | 13850d | Team 3 |
| 54 | 1.3.2.2.3.5.1 | Drug Alerts | 2d | 2013-10-03 | 2013-10-04 | 43 | 13850d | Team 3 |
| 55 | 1.3.2.2.3.5.2 | Allergy Alerts | 2d | 2013-10-07 | 2013-10-08 | 54 | 13850d | Team 3 |
| 56 | 1.3.2.2.3.5.3 | CDS Notifications | 3d | 2013-10-09 | 2013-10-11 | 55 | 13850d | Team 3 |
| 57 | 1.3.2.2.3.6 | **Templates** | 5d | 2013-10-04 | 2013-10-10 | 52 | 13950d | Team 2 |
| 58 | 1.3.2.2.3.6.1 | Public Templates | 2d | 2013-10-04 | 2013-10-07 | 52 | 13950d | Team 2 |
| 59 | 1.3.2.2.3.6.2 | **Provider's Templates** | 3d | 2013-10-08 | 2013-10-10 | 58 | 13950d | Team 2 |
| 60 | 1.3.2.2.3.6.2.1 | Add Custom Templates | 3d | 2013-10-08 | 2013-10-10 | 58 | 13950d | Team 2 |
| 61 | 1.3.2.3 | Testing & Bug Fixing | 8d | 2013-10-04 | 2013-10-15 | 52 |  | Team 1; Team 2; Team 3; Tester |
| 62 | 1.3.3 | **Development (Stage 4)** | 54d | 2013-10-16 | 2013-12-31 | 61 | 8250d | Team 1 |
| 63 | 1.3.3.1 | **Service Layer** | 54d | 2013-10-16 | 2013-12-31 |  | 8250d |  |
| 64 | 1.3.3.1.1 | **Patient Management** | 12d | 2013-10-16 | 2013-10-31 | 61 | 8750d | Team 1 |
| 65 | 1.3.3.1.1.1 | Search Patient | 2d | 2013-10-16 | 2013-10-17 | 61 | 8750d | Team 1 |
| 66 | 1.3.3.1.1.2 | Add Patient | 2d | 2013-10-18 | 2013-10-21 | 65 | 8750d | Team 1 |
| 67 | 1.3.3.1.1.3 | Edit Patient | 2d | 2013-10-22 | 2013-10-23 | 66 | 8750d | Team 1 |
| 68 | 1.3.3.1.1.4 | View Patient | 2d | 2013-10-24 | 2013-10-25 | 67 | 8750d | Team 1 |
| 69 | 1.3.3.1.1.5 | Testing & Bug Fixing | 4d | 2013-10-28 | 2013-10-31 | 68 | 8750d | Team 1; Tester |
| 70 | 1.3.3.1.2 | **Schedules** | 26d | 2013-10-16 | 2013-11-20 | 61 | 11050d | Team 2 |
| 71 | 1.3.3.1.2.1 | **Availability Settings** | 9d | 2013-10-16 | 2013-10-28 | 61 |  | Team 2 |
| 72 | 1.3.3.1.2.1.1 | Display Settings | 2d | 2013-10-16 | 2013-10-17 | 61 |  | Team 2 |
| 73 | 1.3.3.1.2.1.2 | Facility Hours | 7d | 2013-10-18 | 2013-10-28 | 72 |  | Team 2 |
| 74 | 1.3.3.1.2.2 | Appointments | 5d | 2013-10-29 | 2013-11-04 | 73 |  | Team 2 |
| 75 | 1.3.3.1.2.3 | **Day** | 5d | 2013-11-05 | 2013-11-11 | 74 | 11750d | Team 2 |
| 76 | 1.3.3.1.2.3.1 | Schedule Listing | 2d | 2013-11-05 | 2013-11-06 | 74 | 11750d | Team 2 |
| 77 | 1.3.3.1.2.3.2 | Add Appointment | 1.5d | 2013-11-07 | 2013-11-08 | 76 | 11750d | Team 2 |
| 78 | 1.3.3.1.2.3.3 | Block Appointment | 1.5d | 2013-11-08 | 2013-11-11 | 77 | 11750d | Team 2 |

| ID | WBS | Task | Duration | Start | Finish | Predecessors | Total slack | Resources |
| --- | --- | --- | --- | --- | --- | --- | --- | --- |
| 79 | 1.3.3.1.2.4 | **Week** | 8d | 2013-11-05 | 2013-11-14 | 74 | 11450d | Team 3 |
| 80 | 1.3.3.1.2.4.1 | Schedule Listing | 4d | 2013-11-05 | 2013-11-08 | 74 |  | Team 3 |
| 81 | 1.3.3.1.2.4.2 | Add Appointment | 2d | 2013-11-11 | 2013-11-12 | 80 |  | Team 3 |
| 82 | 1.3.3.1.2.4.3 | Block Appointment | 2d | 2013-11-13 | 2013-11-14 | 81 | 11450d | Team 3 |
| 83 | 1.3.3.1.2.5 | Testing & Bug Fixing | 6d | 2013-11-13 | 2013-11-20 | 81 |  | Team 2; Team 3; Tester |
| 84 | 1.3.3.1.3 | **Chart** | 42d | 2013-11-01 | 2013-12-31 |  | 8250d | Team 1; Team 3 |
| 85 | 1.3.3.1.3.1 | Events | 3d | 2013-11-01 | 2013-11-05 | 69 | 8750d | Team 1 |
| 86 | 1.3.3.1.3.2 | PMH | 3d | 2013-11-06 | 2013-11-08 | 85 | 8750d | Team 1 |
| 87 | 1.3.3.1.3.3 | Dx History | 3d | 2013-11-11 | 2013-11-13 | 86 | 8750d | Team 1 |
| 88 | 1.3.3.1.3.4 | Rx List | 3d | 2013-11-14 | 2013-11-18 | 87 | 8750d | Team 1 |
| 89 | 1.3.3.1.3.5 | Allergies | 3d | 2013-11-19 | 2013-11-21 | 88 | 8750d | Team 1 |
| 90 | 1.3.3.1.3.6 | Immunizations | 3d | 2013-11-22 | 2013-11-26 | 89 | 8750d | Team 1 |
| 91 | 1.3.3.1.3.7 | Lab Results | 3d | 2013-11-27 | 2013-11-29 | 90 | 8750d | Team 1 |
| 92 | 1.3.3.1.3.8 | Adv Directives | 3d | 2013-12-02 | 2013-12-04 | 91 | 8750d | Team 1 |
| 93 | 1.3.3.1.3.9 | Lifestyle | 2d | 2013-12-05 | 2013-12-06 | 92 | 8750d | Team 1 |
| 94 | 1.3.3.1.3.10 | Chart Note | 3d | 2013-12-09 | 2013-12-11 | 93 | 8750d | Team 1 |
| 95 | 1.3.3.1.3.11 | Basic Info | 2d | 2013-11-21 | 2013-11-22 | 83 |  | Team 3 |
| 96 | 1.3.3.1.3.12 | Payment | 4d | 2013-11-25 | 2013-11-28 | 95 |  | Team 3 |
| 97 | 1.3.3.1.3.13 | Insurance | 3d | 2013-11-29 | 2013-12-03 | 96 |  | Team 3 |
| 98 | 1.3.3.1.3.14 | Settings | 2d | 2013-12-04 | 2013-12-05 | 97 |  | Team 3 |
| 99 | 1.3.3.1.3.15 | Activity | 2d | 2013-12-06 | 2013-12-09 | 98 |  | Team 3 |
| 100 | 1.3.3.1.3.16 | Appointments | 2d | 2013-12-10 | 2013-12-11 | 99 |  | Team 3 |
| 101 | 1.3.3.1.3.17 | Referrals | 2d | 2013-12-12 | 2013-12-13 | 100 |  | Team 3 |
| 102 | 1.3.3.1.3.18 | eScripts | 3d | 2013-12-16 | 2013-12-18 | 101 |  | Team 3 |
| 103 | 1.3.3.1.3.19 | Documents | 3d | 2013-12-19 | 2013-12-23 | 102 | 8750d | Team 3 |
| 104 | 1.3.3.1.3.20 | Testing & Bug Fixing | 8d | 2013-12-19 | 2013-12-31 | 102 |  | Team 1; Team 3; Tester |

| ID | WBS | Task | Duration | Start | Finish | Predecessors | Total slack | Resources |
| --- | --- | --- | --- | --- | --- | --- | --- | --- |
| 105 | 1.3.3.1.4 | **eRx** | 6d | 2013-11-21 | 2013-11-28 |  | 5450d | Team 2 |
| 106 | 1.3.3.1.4.1 | Sign UP | 2d | 2013-11-21 | 2013-11-22 | 83 | 5450d | Team 2 |
| 107 | 1.3.3.1.4.2 | Send eScript | 1d | 2013-11-25 | 2013-11-25 | 106 | 5450d | Team 2 |
| 108 | 1.3.3.1.4.3 | Send ePrescribe Status | 1d | 2013-11-26 | 2013-11-26 | 107 | 5450d | Team 2 |
| 109 | 1.3.3.1.4.4 | Testing & Bug Fixing | 2d | 2013-11-27 | 2013-11-28 | 108 | 5450d | Team 2; Tester |
| 110 | 1.3.3.1.5 | **Messages** | 6d | 2013-11-29 | 2013-12-06 |  | 5450d | Team 2 |
| 111 | 1.3.3.1.5.1 | New Message | 1d | 2013-11-29 | 2013-11-29 | 109 | 5450d | Team 2 |
| 112 | 1.3.3.1.5.2 | Reply | 1d | 2013-12-02 | 2013-12-02 | 111 | 5450d | Team 2 |
| 113 | 1.3.3.1.5.3 | Foward | 1d | 2013-12-03 | 2013-12-03 | 112 | 5450d | Team 2 |
| 114 | 1.3.3.1.5.4 | File Message | 1d | 2013-12-04 | 2013-12-04 | 113 | 5450d | Team 2 |
| 115 | 1.3.3.1.5.5 | Testing & Bug Fixing | 2d | 2013-12-05 | 2013-12-06 | 114 | 5450d | Team 2; Tester |
| 116 | 1.3.3.1.6 | **Labs** | 4d | 2013-12-09 | 2013-12-12 |  | 5450d | Team 2 |
| 117 | 1.3.3.1.6.1 | Connect Labs | 2d | 2013-12-09 | 2013-12-10 | 115 | 5450d | Team 2 |
| 118 | 1.3.3.1.6.2 | Request New Account | 1d | 2013-12-11 | 2013-12-11 | 117 | 5450d | Team 2 |
| 119 | 1.3.3.1.6.3 | Testing & Bug Fixing | 1d | 2013-12-12 | 2013-12-12 | 118 | 5450d | Team 2; Tester |
| 120 | 1.3.3.1.7 | **Documents** | 8d | 2013-12-12 | 2013-12-23 |  | 8750d | Team 1 |
| 121 | 1.3.3.1.7.1 | Document Listing | 2d | 2013-12-12 | 2013-12-13 | 94 | 8750d | Team 1 |
| 122 | 1.3.3.1.7.2 | Upload Document | 2d | 2013-12-16 | 2013-12-17 | 121 | 8750d | Team 1 |
| 123 | 1.3.3.1.7.3 | Sign Document | 1d | 2013-12-18 | 2013-12-18 | 122 | 8750d | Team 1 |
| 124 | 1.3.3.1.7.4 | Download Document | 1d | 2013-12-19 | 2013-12-19 | 123 | 8750d | Team 1 |
| 125 | 1.3.3.1.7.5 | Testing & Bug Fixing | 2d | 2013-12-20 | 2013-12-23 | 124 | 8750d | Team 1; Tester |
| 126 | 1.3.3.1.8 | **Reporting** | 12d | 2013-12-13 | 2013-12-31 |  | 5800d | Team 2; Team 3 |
| 127 | 1.3.3.1.8.1 | Diagnosis Registry | 1d | 2013-12-13 | 2013-12-13 | 119 | 5700d | Team 2 |
| 128 | 1.3.3.1.8.2 | Medication Report | 1d | 2013-12-16 | 2013-12-16 | 127 | 5700d | Team 2 |
| 129 | 1.3.3.1.8.3 | Patient Lists | 1d | 2013-12-17 | 2013-12-17 | 128 | 5700d | Team 2 |
| 130 | 1.3.3.1.8.4 | Chart Notes Report | 1d | 2013-12-18 | 2013-12-18 | 129 | 5700d | Team 2 |
| 131 | 1.3.3.1.8.5 | H1N1Candidacy Report | 1d | 2013-12-19 | 2013-12-19 | 130 | 5700d | Team 2 |
| 132 | 1.3.3.1.8.6 | PHR User Report | 1d | 2013-12-20 | 2013-12-20 | 131 | 5700d | Team 2 |
| 133 | 1.3.3.1.8.7 | Fax Referrals Report | 1d | 2013-12-23 | 2013-12-23 | 132 | 5700d | Team 2 |
| 134 | 1.3.3.1.8.8 | Drug Interactions Report | 1d | 2013-12-24 | 2013-12-24 | 133 | 5700d | Team 2 |
| 135 | 1.3.3.1.8.9 | e-Prescriptions Report | 1d | 2013-12-25 | 2013-12-25 | 134 | 5800d | Team 2 |
| 136 | 1.3.3.1.8.10 | CQM Report | 2d | 2013-12-26 | 2013-12-27 | 135 | 5800d | Team 2 |
| 137 | 1.3.3.1.8.11 | Testing & Bug Fixing | 2d | 2013-12-30 | 2013-12-31 | 136 | 5800d | Team 2; Tester |

| ID | WBS | Task | Duration | Start | Finish | Predecessors | Total slack | Resources |
| --- | --- | --- | --- | --- | --- | --- | --- | --- |
| 138 | 1.3.3.1.9 | **Billing** | 11d | 2013-12-13 | 2013-12-30 |  | 5550d | Team 1 |
| 139 | 1.3.3.1.9.1 | View | 4d | 2013-12-13 | 2013-12-18 | 119 | 5450d | Team 1 |
| 140 | 1.3.3.1.9.2 | Save Billing | 3d | 2013-12-19 | 2013-12-23 | 139 | 5450d | Team 1 |
| 141 | 1.3.3.1.9.3 | Print | 1d | 2013-12-24 | 2013-12-24 | 140 | 5450d | Team 1 |
| 142 | 1.3.3.1.9.4 | Export | 1d | 2013-12-25 | 2013-12-25 | 141 | 5550d | Team 1 |
| 143 | 1.3.3.1.9.5 | Testing & Bug Fixing | 3d | 2013-12-26 | 2013-12-30 | 142 | 5550d | Team 1; Tester |
| 144 | 1.3.4 | **Development (Stage 5)** | 9d | 2013-12-31 | 2014-01-10 |  | 5550d | Team 2 |
| 145 | 1.3.4.1 | **Patient Management - Presentation Layer** | 9d | 2013-12-31 | 2014-01-10 |  | 5550d | Team 1 |
| 146 | 1.3.4.1.1 | Search Patient | 1d | 2013-12-31 | 2013-12-31 | 143 | 5550d | Team 1 |
| 147 | 1.3.4.1.2 | Add Patient | 2d | 2014-01-01 | 2014-01-02 | 146 | 5550d | Team 1 |
| 148 | 1.3.4.1.3 | Edit Patient | 2d | 2014-01-03 | 2014-01-06 | 147 | 5550d | Team 1 |
| 149 | 1.3.4.1.4 | View Patient | 2d | 2014-01-07 | 2014-01-08 | 148 | 5550d | Team 1 |
| 150 | 1.3.4.1.5 | Testing & Bug Fixing | 2d | 2014-01-09 | 2014-01-10 | 149 | 5550d | Team 1; Tester |
| 151 | 1.3.5 | **Development (Stage 6)** | 11.5d | 2014-01-01 | 2014-01-16 |  | 7100d |  |
| 152 | 1.3.5.1 | **Schedules - Presentation Layer** | 11.5d | 2014-01-01 | 2014-01-16 |  | 7100d | Team 2 |
| 153 | 1.3.5.1.1 | **Availability Settings** | 5d | 2014-01-01 | 2014-01-07 |  |  | Team 2 |
| 154 | 1.3.5.1.1.1 | Display Settings | 2d | 2014-01-01 | 2014-01-02 | 104 |  | Team 3 |
| 155 | 1.3.5.1.1.2 | Facility Hours | 3d | 2014-01-03 | 2014-01-07 | 154 |  | Team 3 |
| 156 | 1.3.5.1.2 | Appointments | 4d | 2014-01-08 | 2014-01-13 | 155 |  | Team 3 |
| 157 | 1.3.5.1.3 | **Day** | 4d | 2014-01-01 | 2014-01-06 |  | 5800d | Team 2 |
| 158 | 1.3.5.1.3.1 | Schedule Listing | 2d | 2014-01-01 | 2014-01-02 | 137 | 5800d | Team 2 |
| 159 | 1.3.5.1.3.2 | Add Appointment | 1d | 2014-01-03 | 2014-01-03 | 158 | 5800d | Team 2 |
| 160 | 1.3.5.1.3.3 | Block Appointment | 1d | 2014-01-06 | 2014-01-06 | 159 | 5800d | Team 2 |
| 161 | 1.3.5.1.4 | **Week** | 6d | 2014-01-07 | 2014-01-14 |  | 7250d | Team 2 |
| 162 | 1.3.5.1.4.1 | Schedule Listing | 4d | 2014-01-07 | 2014-01-10 | 160 | 7250d | Team 2 |
| 163 | 1.3.5.1.4.2 | Add Appointment | 1d | 2014-01-13 | 2014-01-13 | 162 | 7250d | Team 2 |
| 164 | 1.3.5.1.4.3 | Block Appointment | 1d | 2014-01-14 | 2014-01-14 | 163 | 7250d | Team 2 |
| 165 | 1.3.5.1.5 | Testing & Bug Fixing | 7.5d | 2014-01-07 | 2014-01-16 | 160 | 5800d | Team 2; Tester |

| ID | WBS | Task | Duration | Start | Finish | Predecessors | Total slack | Resources |
| --- | --- | --- | --- | --- | --- | --- | --- | --- |
| 166 | 1.3.6 | **Development (Stage 7)** | 25.5d | 2014-01-13 | 2014-02-17 |  | 4900d | Team 2 |
| 167 | 1.3.6.1 | **Chart - Presentation Layer** | 25.5d | 2014-01-13 | 2014-02-17 |  | 4900d | Team 1; Team 3 |
| 168 | 1.3.6.1.1 | Events | 3d | 2014-01-13 | 2014-01-15 | 150 | 5550d | Team 1 |
| 169 | 1.3.6.1.2 | PMH | 3d | 2014-01-16 | 2014-01-20 | 168 | 5550d | Team 1 |
| 170 | 1.3.6.1.3 | Dx History | 3d | 2014-01-21 | 2014-01-23 | 169 | 5550d | Team 1 |
| 171 | 1.3.6.1.4 | Rx List | 3d | 2014-01-24 | 2014-01-28 | 170 | 5550d | Team 1 |
| 172 | 1.3.6.1.5 | Allergies | 4d | 2014-01-29 | 2014-02-03 | 171 | 5550d | Team 1 |
| 173 | 1.3.6.1.6 | Immunizations | 3d | 2014-02-04 | 2014-02-06 | 172 | 5550d | Team 1 |
| 174 | 1.3.6.1.7 | Lab Results | 3d | 2014-01-16 | 2014-01-21 | 165 | 5800d | Team 2 |
| 175 | 1.3.6.1.8 | Adv Directives | 3d | 2014-01-21 | 2014-01-24 | 174 | 5800d | Team 2 |
| 176 | 1.3.6.1.9 | Lifestyle | 2d | 2014-01-24 | 2014-01-28 | 175 | 5800d | Team 2 |
| 177 | 1.3.6.1.10 | Chart Note | 5d | 2014-01-28 | 2014-02-04 | 176 | 5800d | Team 2 |
| 178 | 1.3.6.1.11 | Basic Info | 2d | 2014-01-14 | 2014-01-15 | 156 | 6550d | Team 3 |
| 179 | 1.3.6.1.12 | Payment | 6d | 2014-01-16 | 2014-01-23 | 178 | 6550d | Team 3 |
| 180 | 1.3.6.1.13 | Insurance | 3d | 2014-01-14 | 2014-01-16 | 156 |  | Team 3 |
| 181 | 1.3.6.1.14 | Settings | 2d | 2014-01-17 | 2014-01-20 | 180 |  | Team 3 |
| 182 | 1.3.6.1.15 | Activity | 2d | 2014-01-21 | 2014-01-22 | 181 |  | Team 3 |
| 183 | 1.3.6.1.16 | Appointments | 2d | 2014-01-23 | 2014-01-24 | 182 |  | Team 3 |
| 184 | 1.3.6.1.17 | Referrals | 2d | 2014-01-27 | 2014-01-28 | 183 |  | Team 3 |
| 185 | 1.3.6.1.18 | eScripts | 4d | 2014-01-29 | 2014-02-03 | 184 |  | Team 3 |
| 186 | 1.3.6.1.19 | Documents | 2d | 2014-02-04 | 2014-02-05 | 185 |  | Team 3 |
| 187 | 1.3.6.1.20 | Testing & Bug Fixing | 7.5d | 2014-02-06 | 2014-02-17 | 186 |  | Team 1; Team 2; Team 3; Tester |
| 188 | 1.3.7 | **Development (Stage 8)** | 12d | 2014-02-17 | 2014-03-05 |  | 2700d | Team 2 |
| 189 | 1.3.7.1 | **eRx - Presentation Layer** | 12d | 2014-02-17 | 2014-03-05 |  | 2700d | Team 2 |
| 190 | 1.3.7.1.1 | Sign UP | 4d | 2014-02-17 | 2014-02-21 | 187 | 2700d | Team 2 |
| 191 | 1.3.7.1.2 | Send eScript | 3d | 2014-02-21 | 2014-02-26 | 190 | 2700d | Team 2 |
| 192 | 1.3.7.1.3 | Send ePrescribe Status | 2d | 2014-02-26 | 2014-02-28 | 191 | 2700d | Team 2 |
| 193 | 1.3.7.1.4 | Testing & Bug Fixing | 3d | 2014-02-28 | 2014-03-05 | 192 | 2700d | Team 2; Tester |

| ID | WBS | Task | Duration | Start | Finish | Predecessors | Total slack | Resources |
| --- | --- | --- | --- | --- | --- | --- | --- | --- |
| 194 | 1.3.8 | **Development (Stage 9)** | 7d | 2014-02-17 | 2014-02-26 |  |  |  |
| 195 | 1.3.8.1 | **Messages - Presentation Layer** | 7d | 2014-02-17 | 2014-02-26 |  |  |  |
| 196 | 1.3.8.1.1 | New Message | 2d | 2014-02-17 | 2014-02-19 | 187 |  | Team 1 |
| 197 | 1.3.8.1.2 | Reply | 1d | 2014-02-19 | 2014-02-20 | 196 |  | Team 1 |
| 198 | 1.3.8.1.3 | Foward | 1d | 2014-02-20 | 2014-02-21 | 197 |  | Team 1 |
| 199 | 1.3.8.1.4 | File Message | 1d | 2014-02-21 | 2014-02-24 | 198 |  | Team 1 |
| 200 | 1.3.8.1.5 | Testing & Bug Fixing | 2d | 2014-02-24 | 2014-02-26 | 199 |  | Team 1; Tester |
| 201 | 1.3.9 | **Development (Stage 10)** | 15d | 2014-02-17 | 2014-03-10 |  | 2500d |  |
| 202 | 1.3.9.1 | **Labs - Presentation Layer** | 8d | 2014-02-17 | 2014-02-27 |  | 2400d |  |
| 203 | 1.3.9.1.1 | Connect Labs | 4d | 2014-02-17 | 2014-02-21 | 187 | 2400d | Team 3 |
| 204 | 1.3.9.1.2 | Request New Account | 2d | 2014-02-21 | 2014-02-25 | 203 | 2400d | Team 3 |
| 205 | 1.3.9.1.3 | Testing & Bug Fixing | 2d | 2014-02-25 | 2014-02-27 | 204 | 2400d | Team 3; Tester |
| 206 | 1.3.9.2 | **Documents - Presentation Layer** | 8d | 2014-02-26 | 2014-03-10 |  | 2500d |  |
| 207 | 1.3.9.2.1 | Document Listing | 2d | 2014-02-26 | 2014-02-28 | 200 |  | Team 1 |
| 208 | 1.3.9.2.2 | Upload Document | 2d | 2014-02-28 | 2014-03-04 | 207 | 2500d | Team 1 |
| 209 | 1.3.9.2.3 | Sign Document | 1d | 2014-03-04 | 2014-03-05 | 208 | 2500d | Team 1 |
| 210 | 1.3.9.2.4 | Download Document | 1d | 2014-03-05 | 2014-03-06 | 209 | 2500d | Team 1 |
| 211 | 1.3.9.2.5 | Testing & Bug Fixing | 2d | 2014-03-06 | 2014-03-10 | 210 | 2500d | Team 1; Tester |
| 212 | 1.3.10 | **Development (Stage 11)** | 17d | 2014-02-27 | 2014-03-24 |  | 2400d |  |
| 213 | 1.3.10.1 | **Reporting - Presentation Layer** | 17d | 2014-02-27 | 2014-03-24 |  | 2400d |  |
| 214 | 1.3.10.1.1 | Diagnosis Registry | 2d | 2014-02-27 | 2014-03-03 | 205 | 2400d | Team 3 |
| 215 | 1.3.10.1.2 | Medication Report | 2d | 2014-03-03 | 2014-03-05 | 214 | 2400d | Team 3 |
| 216 | 1.3.10.1.3 | Patient Lists | 2d | 2014-03-05 | 2014-03-07 | 215 | 2400d | Team 3 |
| 217 | 1.3.10.1.4 | Chart Notes Report | 2d | 2014-03-07 | 2014-03-11 | 216 | 2400d | Team 3 |
| 218 | 1.3.10.1.5 | H1N1Candidacy Report | 2d | 2014-03-11 | 2014-03-13 | 217 | 2400d | Team 3 |
| 219 | 1.3.10.1.6 | PHR User Report | 2d | 2014-03-13 | 2014-03-17 | 218 | 2400d | Team 3 |
| 220 | 1.3.10.1.7 | Fax Referrals Report | 2d | 2014-03-05 | 2014-03-07 | 193 | 2700d | Team 2 |
| 221 | 1.3.10.1.8 | Drug Interactions Report | 2d | 2014-03-07 | 2014-03-11 | 220 | 2700d | Team 3 |
| 222 | 1.3.10.1.9 | e-Prescriptions Report | 2d | 2014-03-11 | 2014-03-13 | 221 | 2700d | Team 3 |
| 223 | 1.3.10.1.10 | CQM Report | 4d | 2014-03-13 | 2014-03-19 | 222 | 2700d | Team 3 |
| 224 | 1.3.10.1.11 | Testing & Bug Fixing | 5d | 2014-03-17 | 2014-03-24 | 219 | 2400d | Team 2; Team 3; Tester |

| ID | WBS | Task | Duration | Start | Finish | Predecessors | Total slack | Resources |
| --- | --- | --- | --- | --- | --- | --- | --- | --- |
| 225 | 1.3.10.2 | **Billing - Presentation Layer** | 9d | 2014-03-10 | 2014-03-21 |  | 2500d | Team 1 |
| 226 | 1.3.10.2.1 | View | 3d | 2014-03-10 | 2014-03-13 | 211 | 2500d | Team 1 |
| 227 | 1.3.10.2.2 | Save Billing | 2d | 2014-03-13 | 2014-03-17 | 226 | 2500d | Team 1 |
| 228 | 1.3.10.2.3 | Print | 1d | 2014-03-17 | 2014-03-18 | 227 | 2500d | Team 1 |
| 229 | 1.3.10.2.4 | Export | 1d | 2014-03-18 | 2014-03-19 | 228 | 2700d | Team 1 |
| 230 | 1.3.10.2.5 | Testing & Bug Fixing | 3d | 2014-03-18 | 2014-03-21 | 228 | 2500d | Team 1; Tester |
| 231 | 1.3.5 | **Intergration Testing and Bug Fixes (Stage 12)** | 29d | 2014-02-28 | 2014-04-10 |  |  | Team 1; Team 2; Team 3; Tester |
| 232 | 1.3.5.1 | Cycle 1 - Testing & Bug Fixing | 18d | 2014-02-28 | 2014-03-26 | 207 |  | Team 1; Team 2; Team 3; Tester |
| 233 | 1.3.5.2 | Cycle 2- Testing & Bug Fixing | 8d | 2014-03-26 | 2014-04-07 | 232 |  | Team 1; Team 2; Team 3; Tester |
| 234 | 1.3.5.3 | UAT | 3d | 2014-04-07 | 2014-04-10 | 233 |  | Sr. User [200%] |
| 235 | 1.3.6 | **Closure** | 11d | 2014-04-10 | 2014-04-25 |  |  | PM; Project Board |
| 236 | 1.3.6.1 | Review Product against Acceptance Criteria | 5d | 2014-04-10 | 2014-04-17 | 234 |  | Project Board |
| 237 | 1.3.6.2 | Lesssions Learns | 2d | 2014-04-17 | 2014-04-21 | 236 |  | PM |
| 238 | 1.3.6.3 | Benefits Review Report & Plan (If requrired) | 2d | 2014-04-21 | 2014-04-23 | 237 |  | PM |
| 239 | 1.3.6.4 | Closure Report | 2d | 2014-04-23 | 2014-04-25 | 238 |  | PM |
