# Software Development

Schedule from MS Project, 2019-04-01 to 2019-12-02, costs in $.

## Calendars

- Standard: Mon-Fri 08:00-12:00, 13:00-17:00; Sat-Sun off.

## Resources

| Resource | Rate |
| --- | --- |
| Management | 18 |
| Project Manager | 15 |
| Analyst | 10 |
| Developer 1 | 12 |
| Tester 1 | 8 |
| Trainers | 8 |
| Technical Communicators | 8 |
| Deployment Team | 8 |
| Developer 2 | 12 |
| Developer 3 | 12 |
| tester 2 | 8 |

## Schedule

| ID | WBS | Task | Type | Duration | Start | Finish | Predecessors | Total slack | Resources | Work | Cost |
| --- | --- | --- | --- | --- | --- | --- | --- | --- | --- | --- | --- |
| 1 | 1 | **Scope** |  | 3.5d | 2019-04-01 | 2019-04-04 |  |  |  | 28h | 456 |
| 2 | 1.1 | Determine project scope |  | 4h | 2019-04-01 | 2019-04-01 |  | 0d | Management | 4h | 72 |
| 3 | 1.2 | Secure project sponsorship |  | 1d | 2019-04-01 | 2019-04-02 | 2 | 0d | Management | 8h | 144 |
| 4 | 1.3 | Define preliminary resources |  | 1d | 2019-04-02 | 2019-04-03 | 3 | 0d | Project Manager | 8h | 120 |
| 5 | 1.4 | Secure core resources |  | 1d | 2019-04-03 | 2019-04-04 | 4 | 0d | Project Manager | 8h | 120 |
| 6 | 1.5 | Scope complete | milestone | 0d | 2019-04-04 | 2019-04-04 | 5 | 0d |  |  |  |
| 7 | 2 | **Analysis/Software Requirements** |  | 14d | 2019-04-04 | 2019-04-24 |  | 0d |  | 120h | 1,432 |
| 8 | 2.1 | Conduct needs analysis |  | 5d | 2019-04-04 | 2019-04-11 | 6 | 0d | Analyst | 40h | 400 |
| 9 | 2.2 | Draft preliminary software specifications |  | 3d | 2019-04-11 | 2019-04-16 | 8 | 0d | Analyst | 24h | 240 |
| 10 | 2.3 | Develop preliminary budget |  | 2d | 2019-04-16 | 2019-04-18 | 9 | 0d | Project Manager | 16h | 240 |
| 11 | 2.4 | Review software specifications/budget with team |  | 4h | 2019-04-18 | 2019-04-18 | 10 | 0d | Project Manager; Analyst | 8h | 100 |
| 12 | 2.5 | Incorporate feedback on software specifications |  | 1d | 2019-04-19 | 2019-04-19 | 11 | 0d | Analyst | 8h | 80 |
| 13 | 2.6 | Develop delivery timeline |  | 1d | 2019-04-22 | 2019-04-22 | 12 | 0d | Project Manager | 8h | 120 |
| 14 | 2.7 | Obtain approvals to proceed (concept, timeline, budget) |  | 4h | 2019-04-23 | 2019-04-23 | 13 | 0d | Management; Project Manager | 8h | 132 |
| 15 | 2.8 | Secure required resources |  | 1d | 2019-04-23 | 2019-04-24 | 14 | 0d | Project Manager | 8h | 120 |
| 16 | 2.9 | Analysis complete | milestone | 0d | 2019-04-24 | 2019-04-24 | 15 | 0d |  |  |  |
| 17 | 3 | **Design** |  | 14.5d | 2019-04-24 | 2019-05-14 |  | 0d |  | 120h | 1,444 |
| 18 | 3.1 | Review preliminary software specifications |  | 2d | 2019-04-24 | 2019-04-26 | 16 | 0d | Analyst | 16h | 160 |
| 19 | 3.2 | Develop functional specifications |  | 5d | 2019-04-26 | 2019-05-03 | 18 | 0d | Analyst | 40h | 400 |
| 20 | 3.3 | Develop prototype based on functional specifications |  | 4d | 2019-05-03 | 2019-05-09 | 19 | 0d | Analyst | 32h | 320 |
| 21 | 3.4 | Review functional specifications |  | 2d | 2019-05-09 | 2019-05-13 | 20 | 0d | Management | 16h | 288 |
| 22 | 3.5 | Incorporate feedback into functional specifications |  | 1d | 2019-05-13 | 2019-05-14 | 21 | 0d | Management | 8h | 144 |
| 23 | 3.6 | Obtain approval to proceed |  | 4h | 2019-05-14 | 2019-05-14 | 22 | 0d | Management; Project Manager | 8h | 132 |
| 24 | 3.7 | Design complete | milestone | 0d | 2019-05-14 | 2019-05-14 | 23 | 0d |  |  |  |

| ID | WBS | Task | Type | Duration | Start | Finish | Predecessors | Total slack | Resources | Work | Cost |
| --- | --- | --- | --- | --- | --- | --- | --- | --- | --- | --- | --- |
| 25 | 4 | **Development** |  | 81d | 2019-05-15 | 2019-09-04 |  | 0d |  | 1928h | 23,136 |
| 26 | 4.1 | Review functional specifications |  | 1d | 2019-05-15 | 2019-05-15 | 24 | 0d | Developer 1 | 8h | 96 |
| 27 | 4.2 | MDM |  | 3.33d | 2019-05-16 | 2019-05-21 | 26 | 0d | Developer 1; Developer 2; Developer 3 | 80h | 960 |
| 28 | 4.3 | Course Creation |  | 0.67d | 2019-05-21 | 2019-05-21 | 27 | 0d | Developer 1; Developer 2; Developer 3 | 16h | 192 |
| 29 | 4.4 | Course definition |  | 4d | 2019-05-22 | 2019-05-27 | 28 | 0d | Developer 1; Developer 2; Developer 3 | 96h | 1,152 |
| 30 | 4.5 | Course management |  | 1d | 2019-05-28 | 2019-05-28 | 29 | 0d | Developer 1; Developer 2; Developer 3 | 24h | 288 |
| 31 | 4.6 | Course Versioning |  | 1d | 2019-05-29 | 2019-05-29 | 30 | 0d | Developer 1; Developer 2; Developer 3 | 24h | 288 |
| 32 | 4.7 | Course search |  | 2d | 2019-05-30 | 2019-05-31 | 31 | 0d | Developer 1; Developer 2; Developer 3 | 48h | 576 |
| 33 | 4.8 | Create Programs |  | 1d | 2019-06-03 | 2019-06-03 | 32 | 0d | Developer 1; Developer 2; Developer 3 | 24h | 288 |
| 34 | 4.9 | Program Definition |  | 1.67d | 2019-06-04 | 2019-06-05 | 33 | 0d | Developer 1; Developer 2; Developer 3 | 40h | 480 |
| 35 | 4.10 | Program Management |  | 1d | 2019-06-05 | 2019-06-06 | 34 | 0d | Developer 1; Developer 2; Developer 3 | 24h | 288 |
| 36 | 4.11 | Program versioning |  | 0.67d | 2019-06-06 | 2019-06-07 | 35 | 0d | Developer 1; Developer 2; Developer 3 | 16h | 192 |
| 37 | 4.12 | Search Programs |  | 1.5d | 2019-06-07 | 2019-06-10 | 36 | 0d | Developer 1; Developer 2; Developer 3 | 36h | 432 |
| 38 | 4.13 | Start Proposals |  | 2d | 2019-06-10 | 2019-06-12 | 37 | 0d | Developer 1; Developer 2; Developer 3 | 48h | 576 |
| 39 | 4.14 | Proposal Collaboration |  | 1d | 2019-06-12 | 2019-06-13 | 38 | 0d | Developer 1; Developer 2; Developer 3 | 24h | 288 |
| 40 | 4.15 | Proposal Review |  | 3.33d | 2019-06-13 | 2019-06-19 | 39 | 0d | Developer 1; Developer 2; Developer 3 | 80h | 960 |
| 41 | 4.16 | Search / Archive Proposals |  | 1d | 2019-06-19 | 2019-06-20 | 40 | 0d | Developer 1; Developer 2; Developer 3 | 24h | 288 |
| 42 | 4.17 | Course Set |  | 2d | 2019-06-20 | 2019-06-24 | 41 | 0d | Developer 1; Developer 2; Developer 3 | 48h | 576 |
| 43 | 4.18 | Define Learning Objectives |  | 1d | 2019-06-24 | 2019-06-25 | 42 | 0d | Developer 1; Developer 2; Developer 3 | 24h | 288 |
| 44 | 4.19 | Organize LO |  | 1.5d | 2019-06-25 | 2019-06-26 | 43 | 0d | Developer 1; Developer 2; Developer 3 | 36h | 432 |
| 45 | 4.20 | Attach LO |  | 1d | 2019-06-26 | 2019-06-27 | 44 | 0d | Developer 1; Developer 2; Developer 3 | 24h | 288 |
| 46 | 4.21 | Course Analysis |  | 4.5d | 2019-06-27 | 2019-07-04 | 45 | 0d | Developer 1; Developer 2; Developer 3 | 108h | 1,296 |
| 47 | 4.22 | Program Analysis |  | 1d | 2019-07-04 | 2019-07-05 | 46 | 0d | Developer 1; Developer 2; Developer 3 | 24h | 288 |
| 48 | 4.23 | Print / Export / Notifications |  | 0.83d | 2019-07-05 | 2019-07-05 | 47 | 0d | Developer 1; Developer 2; Developer 3 | 20h | 240 |
| 49 | 4.24 | Backend services |  | 12d | 2019-07-08 | 2019-07-23 | 48 | 0d | Developer 1; Developer 2; Developer 3 | 288h | 3,456 |
| 50 | 4.25 | Configurations |  | 6d | 2019-07-24 | 2019-07-31 | 49 | 0d | Developer 1; Developer 2; Developer 3 | 144h | 1,728 |
| 51 | 4.26 | Accredition |  | 6.67d | 2019-08-01 | 2019-08-09 | 50 | 0d | Developer 1; Developer 2; Developer 3 | 160h | 1,920 |
| 52 | 4.27 | SSO / API Integration / Bilingual |  | 15.67d | 2019-08-09 | 2019-09-02 | 51 | 0d | Developer 1; Developer 2; Developer 3 | 376h | 4,512 |
| 53 | 4.28 | System Features |  | 2.67d | 2019-09-02 | 2019-09-04 | 52 | 0d | Developer 1; Developer 2; Developer 3 | 64h | 768 |
| 54 | 4.29 | Development complete | milestone | 0d | 2019-09-04 | 2019-09-04 | 53 | 0d | Developer 1 |  |  |

| ID | WBS | Task | Type | Duration | Start | Finish | Predecessors | Total slack | Free slack | Resources | Work | Cost |
| --- | --- | --- | --- | --- | --- | --- | --- | --- | --- | --- | --- | --- |
| 55 | 5 | **Testing** |  | 49d | 2019-09-05 | 2019-11-12 |  | 0d |  |  | 704h | 5,952 |
| 56 | 5.1 | Develop unit test plans using product specifications |  | 2d | 2019-09-05 | 2019-09-06 | 54 | 0d |  | Tester 1; tester 2 | 32h | 256 |
| 57 | 5.2 | Develop integration test plans using product specifications |  | 2d | 2019-09-09 | 2019-09-10 | 56 | 0d |  | Tester 1; tester 2 | 32h | 256 |
| 58 | 5.3 | **Functional Testing** |  | 25.5d | 2019-09-11 | 2019-10-16 |  | 0d |  |  | 328h | 2,944 |
| 59 | 5.3.1 | Review modular code |  | 2.5d | 2019-09-11 | 2019-09-13 | 57 | 0d |  | Tester 1; tester 2 | 40h | 320 |
| 60 | 5.3.2 | Test component modules to product specifications |  | 5d | 2019-09-13 | 2019-09-20 | 59 | 0d |  | Tester 1; tester 2 | 80h | 640 |
| 61 | 5.3.3 | Identify anomalies to product specifications |  | 5d | 2019-09-20 | 2019-09-27 | 60 | 0d |  | Tester 1; tester 2 | 80h | 640 |
| 62 | 5.3.4 | Modify code |  | 10d | 2019-09-27 | 2019-10-11 | 61 | 0d |  | Developer 1 | 80h | 960 |
| 63 | 5.3.5 | Re-test modified code |  | 3d | 2019-10-11 | 2019-10-16 | 62 | 0d |  | Tester 1; tester 2 | 48h | 384 |
| 64 | 5.3.6 | Unit testing complete | milestone | 0d | 2019-10-16 | 2019-10-16 | 63 | 0d |  |  |  |  |
| 65 | 5.4 | **Integration Testing** |  | 19.5d | 2019-10-16 | 2019-11-12 |  | 0d |  |  | 312h | 2,496 |
| 66 | 5.4.1 | Test module integration |  | 5.5d | 2019-10-16 | 2019-10-23 | 64 | 0d |  | Tester 1; tester 2 | 88h | 704 |
| 67 | 5.4.2 | Identify anomalies to specifications |  | 6d | 2019-10-24 | 2019-10-31 | 66 | 0d |  | Tester 1; tester 2 | 96h | 768 |
| 68 | 5.4.3 | Modify code |  | 3d | 2019-11-01 | 2019-11-05 | 67 | 0d |  | Tester 1; tester 2 | 48h | 384 |
| 69 | 5.4.4 | Re-test modified code |  | 5d | 2019-11-06 | 2019-11-12 | 68 | 0d |  | Tester 1; tester 2 | 80h | 640 |
| 70 | 5.4.5 | Integration testing complete | milestone | 0d | 2019-11-12 | 2019-11-12 | 69 | 0d |  |  |  |  |
| 71 | 6 | **Training** |  | 12d | 2019-11-13 | 2019-11-28 |  | 2d |  |  | 96h | 768 |
| 72 | 6.1 | Develop training specifications for end users |  | 2d | 2019-11-13 | 2019-11-14 | 70 | 2d | 0d | Trainers | 16h | 128 |
| 73 | 6.2 | Develop training specifications for helpdesk support staff |  | 2d | 2019-11-15 | 2019-11-18 | 72 | 2d | 0d | Trainers | 16h | 128 |
| 74 | 6.3 | Develop training materials |  | 2d | 2019-11-19 | 2019-11-20 | 73 | 2d | 0d | Trainers | 16h | 128 |
| 75 | 6.4 | Conduct training usability study |  | 2d | 2019-11-21 | 2019-11-22 | 74 | 2d | 0d | Trainers | 16h | 128 |
| 76 | 6.5 | Finalize training materials |  | 2d | 2019-11-25 | 2019-11-26 | 75 | 2d | 0d | Trainers | 16h | 128 |
| 77 | 6.6 | Develop training delivery mechanism |  | 2d | 2019-11-27 | 2019-11-28 | 76 | 2d | 0d | Trainers | 16h | 128 |
| 78 | 6.7 | Training materials complete | milestone | 0d | 2019-11-28 | 2019-11-28 | 77 | 2d |  |  |  |  |

| ID | WBS | Task | Type | Duration | Start | Finish | Predecessors | Total slack | Free slack | Resources | Work | Cost |
| --- | --- | --- | --- | --- | --- | --- | --- | --- | --- | --- | --- | --- |
| 79 | 7 | **Documentation** |  | 139d | 2019-05-15 | 2019-11-25 |  | 5d |  |  | 240h | 1,920 |
| 80 | 7.1 | Develop Help specification |  | 1d | 2019-11-13 | 2019-11-13 | 55 | 9d | 0d | Technical Communicators | 8h | 64 |
| 81 | 7.2 | Develop Help system |  | 3d | 2019-11-14 | 2019-11-18 | 80 | 5d | 0d | Technical Communicators | 24h | 192 |
| 82 | 7.3 | Review Help documentation |  | 3d | 2019-11-19 | 2019-11-21 | 81 | 5d | 0d | Technical Communicators | 24h | 192 |
| 83 | 7.4 | Incorporate Help documentation feedback |  | 2d | 2019-11-22 | 2019-11-25 | 82 | 5d |  | Technical Communicators | 16h | 128 |
| 84 | 7.5 | Develop user manuals specifications |  | 2d | 2019-05-15 | 2019-05-16 | 24 | 123d | 0d | Technical Communicators | 16h | 128 |
| 85 | 7.6 | Develop user manuals |  | 3w | 2019-05-17 | 2019-06-06 | 84 | 127d | 0d | Technical Communicators | 120h | 960 |
| 86 | 7.7 | Review all user documentation |  | 2d | 2019-06-07 | 2019-06-10 | 85 | 127d | 0d | Technical Communicators | 16h | 128 |
| 87 | 7.8 | Incorporate user documentation feedback |  | 2d | 2019-06-11 | 2019-06-12 | 86 | 127d | 0d | Technical Communicators | 16h | 128 |
| 88 | 7.9 | Documentation complete | milestone | 0d | 2019-06-12 | 2019-06-12 | 87 | 127d |  |  |  |  |
| 89 | 8 | **Pilot** |  | 7d | 2019-11-13 | 2019-11-21 |  | 0d |  |  | 48h | 440 |
| 90 | 8.1 | Identify test group |  | 1d | 2019-11-13 | 2019-11-13 | 70 | 0d |  | Project Manager | 8h | 120 |
| 91 | 8.2 | Develop software delivery mechanism |  | 1d | 2019-11-14 | 2019-11-14 | 90 | 0d |  |  |  |  |
| 92 | 8.3 | Install/deploy software |  | 1d | 2019-11-15 | 2019-11-15 | 91 | 0d |  | Deployment Team | 8h | 64 |
| 93 | 8.4 | Obtain user feedback |  | 3d | 2019-11-18 | 2019-11-20 | 92 | 0d |  | Deployment Team | 24h | 192 |
| 94 | 8.5 | Evaluate testing information |  | 1d | 2019-11-21 | 2019-11-21 | 93 | 0d |  | Deployment Team | 8h | 64 |
| 95 | 8.6 | Pilot complete | milestone | 0d | 2019-11-21 | 2019-11-21 | 94 | 0d |  |  |  |  |
| 96 | 9 | **Deployment** |  | 4d | 2019-11-22 | 2019-11-27 |  | 0d |  |  | 32h | 256 |
| 97 | 9.1 | Develop deployment methodology |  | 1d | 2019-11-22 | 2019-11-22 | 95 | 0d |  | Deployment Team | 8h | 64 |
| 98 | 9.2 | Secure deployment resources |  | 1d | 2019-11-25 | 2019-11-25 | 97 | 0d |  | Deployment Team | 8h | 64 |
| 99 | 9.3 | Train support staff |  | 1d | 2019-11-26 | 2019-11-26 | 98 | 0d |  | Deployment Team | 8h | 64 |
| 100 | 9.4 | Deploy software |  | 1d | 2019-11-27 | 2019-11-27 | 99 | 0d |  | Deployment Team | 8h | 64 |
| 101 | 9.5 | Deployment complete | milestone | 0d | 2019-11-27 | 2019-11-27 | 100 | 0d |  |  |  |  |
| 102 | 10 | **Post Implementation Review** |  | 3d | 2019-11-28 | 2019-12-02 |  | 0d |  |  | 24h | 360 |
| 103 | 10.1 | Document lessons learned |  | 1d | 2019-11-28 | 2019-11-28 | 101 | 0d |  | Project Manager | 8h | 120 |
| 104 | 10.2 | Distribute to team members |  | 1d | 2019-11-29 | 2019-11-29 | 103 | 0d |  | Project Manager | 8h | 120 |
| 105 | 10.3 | Create software maintenance team |  | 1d | 2019-12-02 | 2019-12-02 | 104 | 0d |  | Project Manager | 8h | 120 |
| 106 | 10.4 | Post implementation review complete | milestone | 0d | 2019-12-02 | 2019-12-02 | 105 | 0d |  |  |  |  |
